# 泗泾单栋计划初稿

How a schedule from MS Project changed from version to version. A marks actual dates.

## Version 1 (saved 2026-01-28)

Note of the change: update project-planning

| ID | WBS | Task | Duration | Start | Finish | Predecessors | Total float | Constraint |
| --- | --- | --- | --- | --- | --- | --- | --- | --- |
| 1 |  | 土地获取 | 0d | 2025-12-10 | 2025-12-10 |  | 0d | start no earlier than 2025-12-10 |
| 2 |  | 投资交底及启动会 | 1d | 2025-12-10 | 2025-12-11 | 1 | 0d |  |
| 3 |  | 产品定位会 | 6d | 2025-12-11 | 2025-12-17 | 2 | 307d |  |
| 4 |  | 方案公示 | 1d | 2026-01-15 | 2026-01-16 | 128 | 237d |  |
| 5 | 5 | **方案批复** | 26d | 2026-01-16 | 2026-02-11 |  | 251d |  |
| 6 | 5.1 | **方案线下征询完成** | 10d | 2026-01-16 | 2026-01-26 |  | 251d |  |
| 7 |  | 镇政府征询完成 | 5d | 2026-01-16 | 2026-01-21 | 4 | 272d |  |
| 8 |  | 房管局征询完成 | 10d | 2026-01-16 | 2026-01-26 | 4 | 267d |  |
| 9 |  | 供电局征询 | 3d | 2026-01-16 | 2026-01-19 | 4 | 274d |  |
| 10 |  | 经委征询完成 | 10d | 2026-01-16 | 2026-01-26 | 4 | 267d |  |
| 11 |  | 方案完成线上报审 | 3d | 2026-01-16 | 2026-01-19 | 4 | 251d |  |
| 12 | 5.2 | **方案线上审批** | 23d | 2026-01-19 | 2026-02-11 |  | 251d |  |
| 13 |  | 绿化市容局审批完成 | 15d | 2026-01-19 | 2026-02-03 | 11 | 259d |  |
| 14 |  | 交警总队审批完成 | 15d | 2026-01-19 | 2026-02-03 | 11 | 251d |  |
| 15 |  | 交通委审批完成 | 15d | 2026-01-19 | 2026-02-03 | 11 | 251d |  |
| 16 |  | 抗震审批完成 | 10d | 2026-01-19 | 2026-01-29 | 11 | 256d |  |
| 17 |  | 民政审批完成 | 10d | 2026-01-19 | 2026-01-29 | 11 | 256d |  |
| 18 |  | 消防审批完成 | 10d | 2026-01-19 | 2026-01-29 | 11 | 256d |  |
| 19 |  | 电力审批完成 | 15d | 2026-01-19 | 2026-02-03 | 11 | 251d |  |
| 20 |  | 民防审批完成 | 15d | 2026-01-19 | 2026-02-03 | 11 | 251d |  |
| 21 |  | 房管审批完成 | 15d | 2026-01-19 | 2026-02-03 | 11 | 251d |  |
| 22 |  | 规土局审批（批复流程）完成 | 3d | 2026-02-03 | 2026-02-06 | 14, 15, 16, 17, 18, 19, 20, 21 | 251d |  |
| 23 |  | 设计方案批复完成 | 5d | 2026-02-06 | 2026-02-11 | 22 | 251d |  |
| 24 | 6 | **经营方案评审** | 22d | 2026-01-16 | 2026-02-07 |  | 255d |  |
| 25 |  | 设计指标、配置锁定 | 1d | 2026-01-16 | 2026-01-17 | 4 | 268d |  |
| 26 |  | 目标成本锁定 | 14d | 2026-01-16 | 2026-01-30 | 4 | 255d |  |
| 27 |  | 开盘节奏、批次划分 | 14d | 2026-01-16 | 2026-01-30 | 4 | 255d |  |
| 28 |  | 工程策划初稿-开发周期、分批次 | 14d | 2026-01-16 | 2026-01-30 | 4 | 255d |  |
| 29 |  | 各部分任务书 | 14d | 2026-01-16 | 2026-01-30 | 4 | 255d |  |
| 30 |  | 合约规划锁定 | 14d | 2026-01-16 | 2026-01-30 | 4 | 255d |  |
| 31 |  | 经营方案评审 | 1d | 2026-01-30 | 2026-01-31 | 25, 26, 27, 28, 29, 30 | 255d |  |
| 32 |  | 经营方案评审OA | 7d | 2026-01-31 | 2026-02-07 | 31 | 255d |  |
| 33 | 7 | **公开招投标工作** | 145d | 2025-12-10 | 2026-05-15 |  | 87d |  |
| 34 | 7.1 | **设计勘察公开招投标** | 48d | 2025-12-10 | 2026-01-27 |  | 249d |  |
| 35 |  | 1.编制设计招标文件初稿，提交建设单位内部审核流转2.预招标申请及其他前期用印资料，建设单位完成用印并返回给招标代理 | 10d | 2025-12-10 | 2025-12-20 | 1 | 249d |  |
| 36 |  | 1.预招标申请等资料送标办，待标办内部审批完成2.建设单位内部完成设计招标文件流转 | 3d | 2025-12-20 | 2025-12-23 | 35 | 249d |  |
| 37 |  | 发布设计预招标公告 | 1d | 2025-12-23 | 2025-12-24 | 36 | 249d |  |
| 38 |  | 接受网上报名 | 6d | 2025-12-24 | 2025-12-30 | 37 | 249d |  |
| 39 |  | 发补充招标文件（如有）（9点30前） | 1d | 2025-12-30 | 2025-12-31 | 38 | 249d |  |
| 40 |  | 开标（上午10:00时）完成 | 15d | 2025-12-31 | 2026-01-15 | 39 | 249d |  |
| 41 |  | 评标（视会议室预定情况微调）完成 | 1d | 2026-01-15 | 2026-01-16 | 40 | 249d |  |
| 42 |  | 中标候选人公示 | 3d | 2026-01-16 | 2026-01-19 | 41 | 266d |  |
| 43 |  | 完成监管备案 | 1d | 2026-01-19 | 2026-01-20 | 42 | 266d |  |
| 44 |  | 设计合同签约 | 7d | 2026-01-20 | 2026-01-27 | 43 | 266d |  |
| 45 | 7.2 | **总包公开招投标** | 102d | 2026-01-22 | 2026-05-15 |  | 44d |  |
| 46 |  | 发布施工招标计划 | 0d | 2026-01-22 | 2026-01-22 |  | 211d | start no earlier than 2026-01-22 |
| 47 |  | 招标计划公示完成（满足40天要求） | 40d | 2026-01-22 | 2026-03-14 | 46 | 211d |  |
| 48 |  | 发布资格预审招标公告 | 2d | 2026-03-14 | 2026-03-16 | 47 | 211d |  |
| 49 |  | 网上报名 | 3d | 2026-03-16 | 2026-03-19 | 48 | 211d |  |
| 50 |  | 发资格预审补充文件（如有） | 7d | 2026-03-19 | 2026-03-26 | 49 | 211d |  |
| 51 |  | 资格预审开标 | 5d | 2026-03-26 | 2026-03-31 | 50 | 211d |  |
| 52 |  | 资格预审评标 | 3d | 2026-03-31 | 2026-04-03 | 51 | 211d |  |
| 53 |  | 图纸算量，下午发补充文件 | 25d | 2026-03-18 | 2026-04-12 | 165, 231, 177 | 0d |  |
| 54 |  | 发施工招标补充文件（本次无）2点前 | 0d | 2026-04-12 | 2026-04-12 | 53 | 0d |  |
| 55 |  | 施工开标，下午2点开标 | 18d | 2026-04-12 | 2026-04-30 | 54 | 0d |  |
| 56 |  | 施工评标,发布中标公示 | 3d | 2026-04-30 | 2026-05-03 | 55 | 0d |  |
| 57 |  | 中标候选人公示 | 3d | 2026-05-03 | 2026-05-06 | 56 | 0d |  |
| 58 |  | 1、完成监管备案2、完善合同，并发布。发布72小时后可以合同备案. | 5d | 2026-05-06 | 2026-05-11 | 57 | 0d |  |
| 59 |  | 施工合同公示 | 3d | 2026-05-11 | 2026-05-14 | 58 | 0d |  |
| 60 |  | 施工合同网上备案，履约保函提前开 | 1d | 2026-05-14 | 2026-05-15 | 59 | 0d |  |
| 61 | 7.3 | **监理公开招投标** | 32d | 2026-03-05 | 2026-04-06 |  | 205d |  |
| 62 |  | 发布监理招标公告 | 0d | 2026-03-05 | 2026-03-05 |  | 205d | start no earlier than 2026-03-05 |
| 63 |  | 接受网上报名 | 5d | 2026-03-05 | 2026-03-10 | 62 | 205d |  |
| 64 |  | 发补充招标文件（如有）（12点前） | 4d | 2026-03-10 | 2026-03-14 | 63 | 205d |  |
| 65 |  | 开标完成 | 15d | 2026-03-14 | 2026-03-29 | 64 | 205d |  |
| 66 |  | 评标（视会议室预定情况微调）完成 | 2d | 2026-03-29 | 2026-03-31 | 65 | 205d |  |
| 67 |  | 中标公示 | 3d | 2026-03-31 | 2026-04-03 | 66 | 205d |  |
| 68 |  | 完成监管备案 | 3d | 2026-04-03 | 2026-04-06 | 67 | 205d |  |
| 69 | 7.4 | **IDI公开招投标** | 28d | 2026-03-15 | 2026-04-12 |  | 202d |  |
| 70 |  | 发布施工招标计划 | 0d | 2026-03-15 | 2026-03-15 |  | 202d | start no earlier than 2026-03-15 |

| ID | WBS | Task | Duration | Start | Finish | Predecessors | Total float |
| --- | --- | --- | --- | --- | --- | --- | --- |
| 71 |  | 招标计划公示完成（满足40天要求） | 5d | 2026-03-15 | 2026-03-20 | 70 | 202d |
| 72 |  | 发布资格预审招标公告 | 1d | 2026-03-20 | 2026-03-21 | 71 | 202d |
| 73 |  | 网上报名 | 15d | 2026-03-21 | 2026-04-05 | 72 | 202d |
| 74 |  | 发资格预审补充文件（如有） | 1d | 2026-04-05 | 2026-04-06 | 73 | 202d |
| 75 |  | 资格预审开标完成 | 3d | 2026-04-06 | 2026-04-09 | 74 | 202d |
| 76 |  | 资格预审评标完成 | 3d | 2026-04-09 | 2026-04-12 | 75 | 202d |
| 77 | 8 | **设计工作** | 112d | 2025-11-16 | 2026-03-18 |  |  |
| 78 | 8.1 | **方案阶段** | 91d | 2025-11-16 | 2026-02-26 |  | 25d |
| 79 | 8.1.1 | **建筑方案** | 65d | 2025-11-16 | 2026-01-20 |  | 25d |
| 80 |  | 建筑方案单位确定 | 3d | 2025-12-11 | 2025-12-14 | 2 | 310d |
| 81 |  | 产品策划成果确认（物业类型及户型配比） | 7d | 2025-12-11 | 2025-12-18 | 2 | 0d |
| 82 |  | 建筑任务书编写完成 | 2d | 2025-12-18 | 2025-12-20 | 81 | 0d |
| 83 |  | 建筑方案及施工图设计资源选取及合同OA审批完成 | 3d | 2025-11-16 | 2025-11-19 |  | 335d |
| 84 |  | 第一轮：确定规划总图初稿、户型选择及分布 | 10d | 2025-12-20 | 2025-12-30 | 82 | 232d |
| 85 |  | 第二轮：总图方案确定、户型深化设计、立面方向 | 7d | 2025-12-30 | 2026-01-06 | 84 | 237d |
| 86 |  | 第三轮：总图、户型、立面SKE模型汇报及确定 | 7d | 2026-01-06 | 2026-01-13 | 85 | 237d |
| 87 |  | 第四轮：总图、户型、立面SKE模型汇报及确定 | 7d | 2026-01-09 | 2026-01-16 | 126 | 0d |
| 88 |  | 建筑提资至景观进行概念方案设计、提资室内户型优化完成 | 3d | 2026-01-16 | 2026-01-19 | 87 | 257d |
| 89 |  | 产品配置标准及成本目标确定 | 14d | 2026-01-06 | 2026-01-20 | 85 | 273d |
| 90 | 8.1.2 | **精装方案** | 44d | 2025-12-18 | 2026-01-31 |  | 260d |
| 91 |  | 室内设计任务书确定（定档，风格及配置） | 3d | 2025-12-18 | 2025-12-21 | 81 | 260d |
| 92 |  | 室内设计单位比选及合同OA审批 | 7d | 2025-12-21 | 2025-12-28 | 91 | 260d |
| 93 |  | 住宅户型配合及平面优化 | 21d | 2025-12-28 | 2026-01-18 | 92 | 275d |
| 94 |  | 样板房售楼处或精装概念提案（含配置标准确认） | 7d | 2025-12-28 | 2026-01-04 | 92 | 260d |
| 95 |  | 个性样板房售楼处或精装深化方案汇报（平面及效果图） | 15d | 2026-01-16 | 2026-01-31 | 94, 87 | 248d |
| 96 |  | 精装修样板房深化方案汇报（平面及效果图） | 15d | 2026-01-16 | 2026-01-31 | 94, 87 | 248d |
| 97 | 8.1.3 | **景观方案** | 39d | 2025-12-18 | 2026-01-26 |  | 229d |
| 98 |  | 景观设计任务书确定 | 2d | 2025-12-18 | 2025-12-20 | 81 | 235d |
| 99 |  | 景观设计单位比选及合同签订 | 7d | 2025-12-20 | 2025-12-27 | 98 | 235d |
| 100 |  | 第一轮：景观全区含示范区概念方案汇报 | 14d | 2025-12-30 | 2026-01-13 | 99, 84 | 232d |
| 101 |  | 第二轮：景观示范区深化方案汇报 | 10d | 2026-01-16 | 2026-01-26 | 100, 87 | 229d |
| 102 | 8.1.4 | **结构方案** | 33d | 2026-01-13 | 2026-02-26 |  | 237d |
| 103 |  | 结构方案与布局技术落位汇报 | 2d | 2026-01-13 | 2026-01-15 | 86 | 237d |
| 104 |  | 桩基比选完成 | 7d | 2026-01-15 | 2026-01-22 | 103 | 237d |
| 105 |  | 设计前试桩 | 14d | 2026-01-22 | 2026-02-05 | 104, 84 | 237d |
| 106 |  | 桩基招标清单 | 7d | 2026-01-19 | 2026-01-26 | 42 | 267d |
| 107 |  | 围护方案初判 | 7d | 2026-01-19 | 2026-01-26 | 42 | 267d |
| 108 |  | PC技术选型专题汇报（如有） | 10d | 2026-02-05 | 2026-02-26 | 105, 87 | 237d |
| 109 | 8.1.5 | **机电方案** | 30d | 2025-12-30 | 2026-01-29 |  | 264d |
| 110 |  | 电梯选型专题汇报 | 7d | 2025-12-30 | 2026-01-06 | 84 | 287d |
| 111 |  | 智能化方案汇报（第一轮） | 10d | 2025-12-30 | 2026-01-09 | 84 | 264d |
| 112 |  | 智能化方案汇报（第二轮） | 20d | 2026-01-09 | 2026-01-29 | 111 | 264d |
| 113 | 8.2 | **扩初设计** | 67d | 2025-12-20 | 2026-03-08 |  | 0d |
| 114 | 8.2.1 | **建筑扩初设计** | 67d | 2025-12-20 | 2026-03-08 |  | 0d |
| 115 |  | 方案阶段总图日照分析定稿（外部单位计算） | 17d | 2026-01-16 | 2026-02-02 | 87 | 260d |
| 116 |  | 方案阶段计容面积预测及可售面积预测 | 7d | 2026-01-16 | 2026-01-23 | 87 | 270d |
| 117 |  | 平面、立面深化、所有单体立面细节推敲 | 14d | 2025-12-30 | 2026-01-13 | 84 | 256d |
| 118 |  | 方案设计提资成果完成及审核,同步提资室内落实点位、景观进行示范区深化设计 | 14d | 2026-01-19 | 2026-02-02 | 88 | 257d |
| 119 |  | PC技术选型专题汇报 | 3d | 2026-02-02 | 2026-02-05 | 118 | 257d |
| 120 |  | 报规文本初稿完成 | 7d | 2025-12-20 | 2025-12-27 | 82 | 0d |
| 121 |  | 方案汇报属地政府完成 | 3d | 2025-12-27 | 2025-12-30 | 120 | 294d |
| 122 |  | 规划预征询完成 | 10d | 2025-12-27 | 2026-01-06 | 120 | 0d |
| 123 |  | 交通预征询完成 | 10d | 2025-12-27 | 2026-01-06 | 120 | 287d |
| 124 |  | 交警征询完成 | 10d | 2025-12-27 | 2026-01-06 | 120 | 287d |
| 125 |  | 环卫预征询完成 | 10d | 2025-12-27 | 2026-01-06 | 120 | 287d |
| 126 |  | 方案汇报规划局完成 | 3d | 2026-01-06 | 2026-01-09 | 122 | 0d |
| 127 |  | 报批文本及相关报建成果（方案报建图） | 5d | 2026-01-09 | 2026-01-14 | 126 | 237d |
| 128 |  | 方案公示 | 1d | 2026-01-14 | 2026-01-15 | 127 | 237d |
| 129 |  | 第一轮结构布置汇报会（示范区+户型） | 3d | 2026-01-13 | 2026-01-16 | 117 | 259d |
| 130 |  | 第一轮车库汇报会 | 2d | 2026-01-16 | 2026-01-18 | 129 | 259d |
| 131 |  | 首层平面图初稿提资完成 | 7d | 2025-12-27 | 2026-01-03 | 120 | 290d |
| 132 |  | 报批文本及相关报建成果（方案报建图） | 3d | 2026-01-16 | 2026-01-19 | 87 | 274d |
| 133 |  | 建筑落实户型点位初稿并反提室内 | 7d | 2026-01-16 | 2026-01-23 | 129 | 270d |
| 134 |  | 示范区建筑方案深化汇报（南示范区修改完成的方案） | 14d | 2026-01-13 | 2026-01-27 | 117 | 266d |
| 135 |  | 立面分色汇报及成本优化汇报 | 14d | 2026-01-13 | 2026-01-27 | 117 | 256d |
| 136 |  | 多专业合模方案汇报 | 3d | 2026-02-26 | 2026-03-01 | 135, 96, 101, 108 | 237d |
| 137 |  | 定妆效果图汇报及第一次材料样板汇报 | 7d | 2026-03-01 | 2026-03-08 | 136 | 237d |
| 138 | 8.2.1.24 | **结构扩初设计** | 18d | 2026-01-16 | 2026-02-03 |  | 259d |
| 139 |  | 终版结构布置汇报 | 7d | 2026-01-16 | 2026-01-23 | 129 | 268d |
| 140 |  | 终版地库落地汇报 | 7d | 2026-01-18 | 2026-01-25 | 130 | 259d |

| ID | WBS | Task | Duration | Start | Finish | Predecessors | Total float | Constraint |
| --- | --- | --- | --- | --- | --- | --- | --- | --- |
| 141 |  | 扩初技术方案评审及设计完成（地上） | 2d | 2026-01-23 | 2026-01-25 | 139 | 268d |  |
| 142 |  | 扩初技术方案评审及设计完成（地库） | 2d | 2026-01-25 | 2026-01-27 | 140 | 259d |  |
| 143 |  | 结构扩初图完成 | 7d | 2026-01-27 | 2026-02-03 | 142 | 259d |  |
| 144 | 8.2.1.25 | **机电扩初设计** | 21d | 2026-01-16 | 2026-02-06 |  | 240d |  |
| 145 |  | 精装修点位提资 | 15d | 2026-01-16 | 2026-01-31 | 4 | 240d |  |
| 146 |  | 机电扩初设计 | 6d | 2026-01-31 | 2026-02-06 | 145 | 256d |  |
| 147 | 8.2.2 | **精装修扩初设计** | 14d | 2026-01-31 | 2026-02-25 |  | 248d |  |
| 148 |  | 售楼处砌筑水电定稿，提交建筑（点位确认初稿） | 14d | 2026-01-31 | 2026-02-25 | 95 | 248d |  |
| 149 |  | 住宅砌筑水电定稿，提交建筑（点位确认定稿） | 14d | 2026-01-31 | 2026-02-25 | 96 | 248d |  |
| 150 | 8.2.3 | **景观扩初设计** | 14d | 2026-01-26 | 2026-02-09 |  | 229d |  |
| 151 |  | 示范区景观扩初设计完成及成本测算 | 14d | 2026-01-26 | 2026-02-09 | 101 | 229d |  |
| 152 | 8.3 | **施工图阶段** | 111d | 2025-11-16 | 2026-03-18 |  | 61d |  |
| 153 | 8.3.1 | **建筑图** | 108d | 2025-11-16 | 2026-03-15 |  | 61d |  |
| 154 |  | 节能计算完成 | 7d | 2026-01-16 | 2026-01-23 | 87 | 253d |  |
| 155 |  | 保温体系确定 | 4d | 2026-01-23 | 2026-01-27 | 154 | 261d |  |
| 156 |  | 工程做法表 | 5d | 2026-01-27 | 2026-02-01 | 155 | 261d |  |
| 157 |  | PC拆分图完成 | 7d | 2026-01-16 | 2026-01-23 | 87 | 250d |  |
| 158 |  | PC深化图完成 | 20d | 2026-01-23 | 2026-02-23 | 157 | 250d |  |
| 159 |  | 平面图终稿完成 | 10d | 2026-01-16 | 2026-01-26 | 87 | 0d |  |
| 160 |  | 建筑平立剖 | 8d | 2026-01-26 | 2026-02-03 | 159 | 0d |  |
| 161 |  | 施工图技术评审及审图（第一波内审） | 25d | 2026-01-16 | 2026-02-10 | 87 | 3d |  |
| 162 |  | 施工图阶段计容面积预测及可售面积预测 | 7d | 2026-02-10 | 2026-02-28 | 161 | 245d |  |
| 163 |  | 施工图内部招标、外部送审图完成（含PC拆解图） | 7d | 2026-02-10 | 2026-02-28 | 161 | 245d |  |
| 164 |  | 报建施工图完成 | 20d | 2026-02-10 | 2026-03-13 | 161 | 3d |  |
| 165 |  | 施工图定稿（蓝图签发）（全套施工图）审图合格证 | 2d | 2026-03-13 | 2026-03-15 | 164 | 3d |  |
| 166 |  | PC深化图签发完成 | 1d | 2025-11-16 | 2025-11-17 |  | 337d |  |
| 167 | 8.3.2 | **结构图** | 50d | 2026-01-16 | 2026-03-18 |  | 18d |  |
| 168 |  | 物探完成 | 5d | 2026-01-16 | 2026-01-21 | 41 | 262d |  |
| 169 |  | 初步勘察完成 | 7d | 2026-01-19 | 2026-01-26 | 42 | 267d |  |
| 170 |  | 详细勘察完成 | 14d | 2026-01-16 | 2026-01-30 | 41 | 249d |  |
| 171 |  | 桩基施工图完成 | 14d | 2026-01-30 | 2026-02-24 | 170 | 249d |  |
| 172 |  | 围护施工图完成 | 10d | 2026-01-30 | 2026-02-09 | 168, 170 | 253d |  |
| 173 |  | 单体楼栋结构图完成 | 10d | 2026-02-03 | 2026-02-24 | 160 | 0d |  |
| 174 |  | 地库结构图完成 | 10d | 2026-02-03 | 2026-02-24 | 160 | 249d |  |
| 175 |  | 后浇带与现场工程策划耦合 | 10d | 2026-02-24 | 2026-03-06 | 173 | 0d |  |
| 176 |  | 报建施工图完成 | 11d | 2026-03-06 | 2026-03-17 | 175 | 0d |  |
| 177 |  | 施工图定稿（蓝图签发）（全套施工图）审图合格证完成 | 1d | 2026-03-17 | 2026-03-18 | 176 | 0d |  |
| 178 | 8.3.3 | **机电图** | 37d | 2026-01-27 | 2026-03-16 |  | 229d |  |
| 179 |  | 机电图纸初稿完成 | 7d | 2026-01-31 | 2026-02-07 | 145 | 240d |  |
| 180 |  | 给排水图纸初稿完成 | 7d | 2026-01-31 | 2026-02-07 | 145 | 240d |  |
| 181 |  | 机电图纸第一版 | 5d | 2026-02-07 | 2026-02-23 | 179 | 240d |  |
| 182 |  | 给排水图纸第一版 | 5d | 2026-02-07 | 2026-02-23 | 180 | 240d |  |
| 183 |  | 机电图纸第二版 | 10d | 2026-02-23 | 2026-03-05 | 181 | 240d |  |
| 184 |  | 给排水图纸第二版 | 10d | 2026-02-23 | 2026-03-05 | 182 | 240d |  |
| 185 |  | 外立面机电图合模 | 7d | 2026-02-03 | 2026-02-10 | 160 | 252d |  |
| 186 |  | 消防施工图完成 | 21d | 2026-02-03 | 2026-03-07 | 160 | 238d |  |
| 187 |  | 智能化配置提资 | 7d | 2026-02-03 | 2026-02-10 | 160 | 238d |  |
| 188 |  | 智能化施工图完成 | 14d | 2026-02-10 | 2026-03-07 | 187 | 238d |  |
| 189 |  | 电力配合设计单位 | 4d | 2026-01-27 | 2026-01-31 |  | 237d | start no earlier than 2026-01-27 |
| 190 |  | PK站图纸施工图 | 25d | 2026-01-31 | 2026-03-08 | 189 | 237d |  |
| 191 |  | 空调施工图完成 | 14d | 2026-01-31 | 2026-02-25 | 145 | 248d |  |
| 192 |  | 地暖施工图完成 | 14d | 2026-01-31 | 2026-02-25 | 145 | 248d |  |
| 193 |  | 雨污图纸完成 | 10d | 2026-02-09 | 2026-03-02 | 151 | 229d |  |
| 194 |  | 燃气图纸完成 | 7d | 2026-02-09 | 2026-02-27 | 151 | 232d |  |
| 195 |  | 室外给水图纸完成 | 7d | 2026-02-09 | 2026-02-27 | 151 | 232d |  |
| 196 |  | 电力图纸完成 | 10d | 2026-02-09 | 2026-03-02 | 189, 151 | 229d |  |
| 197 |  | 室外综合管网设计初稿完成（设计院） | 14d | 2026-03-02 | 2026-03-16 | 193, 194, 195, 196 | 229d |  |
| 198 |  | 光伏图纸 | 14d | 2026-02-07 | 2026-03-04 | 180 | 241d | start no earlier than 2026-01-29 |
| 199 |  | 充电桩图纸完成 | 14d | 2026-02-07 | 2026-03-04 | 180 | 241d |  |
| 200 | 8.3.4 | **外立面深化图** | 40d | 2026-01-16 | 2026-03-08 |  | 237d |  |
| 201 |  | 外立面成本耦合优化 | 15d | 2026-01-16 | 2026-01-31 | 4 | 237d |  |
| 202 |  | 方案单位终版提资 | 5d | 2026-01-31 | 2026-02-05 | 201 | 237d |  |
| 203 |  | 幕墙关键节点图 | 7d | 2026-02-05 | 2026-02-23 | 202 | 240d |  |
| 204 |  | 幕墙平立剖初稿 | 7d | 2026-02-23 | 2026-03-02 | 203 | 240d |  |
| 205 |  | 示范区幕墙施工图 | 20d | 2026-02-05 | 2026-03-08 | 202 | 237d |  |
| 206 |  | 幕墙施工图完成 | 3d | 2026-03-02 | 2026-03-05 | 204 | 240d |  |
| 207 |  | 涂料施工图完成 | 15d | 2026-02-05 | 2026-03-03 | 202 | 242d |  |
| 208 |  | 线条施工图完成 | 15d | 2026-02-05 | 2026-03-03 | 202 | 242d |  |
| 209 |  | 门窗选型及配置确定 | 3d | 2026-02-05 | 2026-02-08 | 154, 202 | 240d |  |
| 210 |  | 门窗施工图完成 | 14d | 2026-02-08 | 2026-03-05 | 209 | 240d |  |

| ID | WBS | Task | Duration | Start | Finish | Predecessors | Total float | Constraint |
| --- | --- | --- | --- | --- | --- | --- | --- | --- |
| 211 |  | 栏杆选型及配置确定 | 3d | 2026-02-05 | 2026-02-08 | 154, 202 | 240d |  |
| 212 |  | 栏杆施工图完成 | 14d | 2026-02-08 | 2026-03-05 | 211 | 240d |  |
| 213 |  | 单元门提资 | 7d | 2026-02-05 | 2026-02-23 | 202 | 250d |  |
| 214 |  | 单元门施工图完成 | 14d | 2026-02-05 | 2026-03-02 | 202 | 243d |  |
| 215 | 8.3.5 | **结构图** | 47d | 2026-01-16 | 2026-03-15 |  | 3d |  |
| 216 |  | 物探完成 | 5d | 2026-01-16 | 2026-01-21 | 41 | 262d |  |
| 217 |  | 初步勘察完成 | 7d | 2026-01-19 | 2026-01-26 | 42 | 267d |  |
| 218 |  | 详细勘察完成 | 14d | 2026-01-16 | 2026-01-30 | 41 | 249d |  |
| 219 |  | 桩基施工图完成 | 14d | 2026-01-30 | 2026-02-24 | 218 | 249d |  |
| 220 |  | 围护施工图完成 | 10d | 2026-01-30 | 2026-02-09 | 216, 218 | 253d |  |
| 221 |  | 节能计算完成 | 7d | 2026-01-16 | 2026-01-23 | 87 | 261d |  |
| 222 |  | 保温体系确定 | 4d | 2026-01-23 | 2026-01-27 | 221 | 261d |  |
| 223 |  | 工程做法表 | 5d | 2026-01-27 | 2026-02-01 | 222 | 261d |  |
| 224 |  | PC拆分图完成 | 7d | 2026-01-16 | 2026-01-23 | 87 | 249d |  |
| 225 |  | PC深化图完成 | 20d | 2026-01-23 | 2026-02-23 | 224 | 249d |  |
| 226 |  | 首层平面图终稿完成 | 14d | 2026-01-16 | 2026-01-30 | 87 | 263d |  |
| 227 |  | 施工图技术评审及审图（第一波内审） | 25d | 2026-01-16 | 2026-02-10 | 87 | 3d |  |
| 228 |  | 施工图阶段计容面积预测及可售面积预测 | 7d | 2026-02-10 | 2026-02-28 | 227 | 245d |  |
| 229 |  | 施工图内部招标、外部送审图完成（含PC拆解图） | 7d | 2026-02-10 | 2026-02-28 | 227 | 245d |  |
| 230 |  | 报建施工图完成 | 20d | 2026-02-10 | 2026-03-13 | 227 | 3d |  |
| 231 |  | 施工图定稿（蓝图签发）（全套施工图）审图合格证 | 2d | 2026-03-13 | 2026-03-15 | 230 | 3d |  |
| 232 |  | PC深化图签发完成 | 1d | 2026-02-23 | 2026-02-24 | 225 | 249d |  |
| 233 |  | 室外综合管网设计初稿完成（设计院） | 30d | 2026-01-16 | 2026-02-26 | 87 | 232d |  |
| 234 |  | 室外综合管网设计终稿完成（汇总外部单位图纸） | 15d | 2026-02-26 | 2026-03-13 | 233 | 232d |  |
| 235 | 9 | **总包内部招标工作** | 51d | 2026-05-03 | 2026-06-23 |  | 59d |  |
| 236 | 9.1 | **土方单位确定** | 28d | 2026-05-03 | 2026-05-31 |  | 153d |  |
| 237 |  | 单位推荐完成 | 2d | 2026-05-03 | 2026-05-05 | 56 | 177d |  |
| 238 |  | 单位考察完成 | 1d | 2026-05-05 | 2026-05-06 | 237 | 177d |  |
| 239 |  | 单位入围完成 | 1d | 2026-05-06 | 2026-05-07 | 238 | 177d |  |
| 240 |  | 技术标完成 | 2d | 2026-05-03 | 2026-05-05 | 56 | 179d |  |
| 241 |  | 商务标完成 | 7d | 2026-05-03 | 2026-05-10 | 56 | 153d |  |
| 242 |  | 发标完成 | 1d | 2026-05-10 | 2026-05-11 | 241 | 153d | finish no earlier than 2025-03-25 |
| 243 |  | 回标完成 | 5d | 2026-05-11 | 2026-05-16 | 242 | 153d |  |
| 244 |  | 定标完成 | 1d | 2026-05-16 | 2026-05-17 | 243 | 153d |  |
| 245 |  | 签署合同完成 | 14d | 2026-05-17 | 2026-05-31 | 244 | 153d |  |
| 246 | 9.2 | **示范区精装单位确定** | 51d | 2026-05-03 | 2026-06-23 |  | 80d |  |
| 247 |  | 单位推荐完成 | 10d | 2026-05-03 | 2026-05-13 | 56 | 167d |  |
| 248 |  | 单位考察完成 | 2d | 2026-05-13 | 2026-05-15 | 247 | 167d |  |
| 249 |  | 单位入围完成 | 2d | 2026-05-15 | 2026-05-17 | 248 | 167d |  |
| 250 |  | 技术标完成 | 11d | 2026-05-03 | 2026-05-14 | 56 | 170d |  |
| 251 |  | 商务标完成 | 30d | 2026-05-03 | 2026-06-02 | 56 | 80d |  |
| 252 |  | 发标完成 | 1d | 2026-06-02 | 2026-06-03 | 251 | 80d | finish no earlier than 2025-03-25 |
| 253 |  | 回标完成 | 5d | 2026-06-03 | 2026-06-08 | 252 | 80d |  |
| 254 |  | 定标完成 | 1d | 2026-06-08 | 2026-06-09 | 253 | 80d |  |
| 255 |  | 签署合同完成 | 14d | 2026-06-09 | 2026-06-23 | 254 | 130d |  |
| 256 | 9.3 | **示范区景观单位确定** | 51d | 2026-05-03 | 2026-06-23 |  | 99d |  |
| 257 |  | 单位推荐完成 | 10d | 2026-05-13 | 2026-05-23 | 56FS+10d | 157d |  |
| 258 |  | 单位考察完成 | 2d | 2026-05-23 | 2026-05-25 | 257 | 157d |  |
| 259 |  | 单位入围完成 | 2d | 2026-05-25 | 2026-05-27 | 258 | 157d |  |
| 260 |  | 技术标完成 | 11d | 2026-05-03 | 2026-05-14 | 56 | 170d |  |
| 261 |  | 商务标完成 | 30d | 2026-05-03 | 2026-06-02 | 56 | 99d |  |
| 262 |  | 发标完成 | 1d | 2026-06-02 | 2026-06-03 | 261 | 99d | finish no earlier than 2025-03-25 |
| 263 |  | 回标完成 | 5d | 2026-06-03 | 2026-06-08 | 262 | 99d |  |
| 264 |  | 定标完成 | 1d | 2026-06-08 | 2026-06-09 | 263 | 99d |  |
| 265 |  | 签署合同完成 | 14d | 2026-06-09 | 2026-06-23 | 264 | 130d |  |
| 266 | 9.4 | **示范区幕墙单位确定** | 51d | 2026-05-03 | 2026-06-23 |  | 59d |  |
| 267 |  | 单位推荐完成 | 10d | 2026-05-23 | 2026-06-02 | 56FS+20d | 147d |  |
| 268 |  | 单位考察完成 | 2d | 2026-06-02 | 2026-06-04 | 267 | 147d |  |
| 269 |  | 单位入围完成 | 2d | 2026-06-04 | 2026-06-06 | 268 | 147d |  |
| 270 |  | 技术标完成 | 11d | 2026-05-03 | 2026-05-14 | 56 | 170d |  |
| 271 |  | 商务标完成 | 30d | 2026-05-03 | 2026-06-02 | 56 | 59d |  |
| 272 |  | 发标完成 | 1d | 2026-06-02 | 2026-06-03 | 271 | 59d | finish no earlier than 2025-03-25 |
| 273 |  | 回标完成 | 5d | 2026-06-03 | 2026-06-08 | 272 | 59d |  |
| 274 |  | 定标完成 | 1d | 2026-06-08 | 2026-06-09 | 273 | 59d |  |
| 275 |  | 签署合同完成 | 14d | 2026-06-09 | 2026-06-23 | 274 | 130d |  |
| 276 | 9.5 | **桩基围护单位确定** | 20d | 2026-05-03 | 2026-05-23 |  | 161d |  |
| 277 |  | 单位推荐完成 | 2d | 2026-05-03 | 2026-05-05 | 56 | 177d |  |
| 278 |  | 单位考察完成 | 1d | 2026-05-05 | 2026-05-06 | 277 | 177d |  |
| 279 |  | 单位入围完成 | 1d | 2026-05-06 | 2026-05-07 | 278 | 177d |  |
| 280 |  | 技术标完成 | 2d | 2026-05-03 | 2026-05-05 | 56 | 179d |  |

| ID | WBS | Task | Duration | Start | Finish | Predecessors | Total float | Constraint |
| --- | --- | --- | --- | --- | --- | --- | --- | --- |
| 281 |  | 商务标完成 | 2d | 2026-05-03 | 2026-05-05 | 56 | 161d |  |
| 282 |  | 发标完成 | 1d | 2026-05-05 | 2026-05-06 | 281 | 161d | finish no earlier than 2025-03-25 |
| 283 |  | 回标完成 | 2d | 2026-05-06 | 2026-05-08 | 282 | 161d |  |
| 284 |  | 定标完成 | 1d | 2026-05-08 | 2026-05-09 | 283 | 161d |  |
| 285 |  | 签署合同完成 | 14d | 2026-05-09 | 2026-05-23 | 284 | 161d |  |
| 286 | 9.6 | **电力单位确定** | 28d | 2026-05-03 | 2026-05-31 |  | 153d |  |
| 287 |  | 单位推荐完成 | 2d | 2026-05-03 | 2026-05-05 | 56 | 177d |  |
| 288 |  | 单位考察完成 | 1d | 2026-05-05 | 2026-05-06 | 287 | 177d |  |
| 289 |  | 单位入围完成 | 1d | 2026-05-06 | 2026-05-07 | 288 | 177d |  |
| 290 |  | 技术标完成 | 2d | 2026-05-03 | 2026-05-05 | 56 | 179d |  |
| 291 |  | 商务标完成 | 7d | 2026-05-03 | 2026-05-10 | 56 | 153d |  |
| 292 |  | 发标完成 | 1d | 2026-05-10 | 2026-05-11 | 291 | 153d | finish no earlier than 2025-03-25 |
| 293 |  | 回标完成 | 5d | 2026-05-11 | 2026-05-16 | 292 | 153d |  |
| 294 |  | 定标完成 | 1d | 2026-05-16 | 2026-05-17 | 293 | 153d |  |
| 295 |  | 签署合同完成 | 14d | 2026-05-17 | 2026-05-31 | 294 | 153d |  |
| 296 | 9.7 | **自来水单位确定** | 28d | 2026-05-03 | 2026-05-31 |  | 153d |  |
| 297 |  | 单位推荐完成 | 2d | 2026-05-03 | 2026-05-05 | 56 | 177d |  |
| 298 |  | 单位考察完成 | 1d | 2026-05-05 | 2026-05-06 | 297 | 177d |  |
| 299 |  | 单位入围完成 | 1d | 2026-05-06 | 2026-05-07 | 298 | 177d |  |
| 300 |  | 技术标完成 | 2d | 2026-05-03 | 2026-05-05 | 56 | 179d |  |
| 301 |  | 商务标完成 | 7d | 2026-05-03 | 2026-05-10 | 56 | 153d |  |
| 302 |  | 发标完成 | 1d | 2026-05-10 | 2026-05-11 | 301 | 153d | finish no earlier than 2025-03-25 |
| 303 |  | 回标完成 | 5d | 2026-05-11 | 2026-05-16 | 302 | 153d |  |
| 304 |  | 定标完成 | 1d | 2026-05-16 | 2026-05-17 | 303 | 153d |  |
| 305 |  | 签署合同完成 | 14d | 2026-05-17 | 2026-05-31 | 304 | 153d |  |
| 306 | 10 | **工程工作** | 292d | 2025-11-16 | 2026-09-14 |  |  |  |
| 307 | 10.1 | **总包施工准备工作** | 82.12d | 2026-03-12 | 2026-06-02 |  | 151d |  |
| 308 |  | 生活区施工 | 20d | 2026-05-03 | 2026-05-23 | 56 | 161d |  |
| 309 |  | 生活区地块土地平整完整 | 2d | 2026-05-03 | 2026-05-05 | 56 | 161d |  |
| 310 |  | 生活区地块石子铺设完成 | 1d | 2026-05-05 | 2026-05-06 | 309 | 161d |  |
| 311 |  | 生活区地块钢筋铺设完成 | 1d | 2026-05-06 | 2026-05-07 | 310 | 161d |  |
| 312 |  | 生活区地块钢筋绑扎完成 | 1d | 2026-05-07 | 2026-05-08 | 311 | 161d |  |
| 313 |  | 生活区地块混凝土浇筑完成 | 10d | 2026-05-08 | 2026-05-18 | 312 | 161d |  |
| 314 |  | 生活区地块集装箱吊装完成 | 3d | 2026-05-18 | 2026-05-21 | 313 | 161d |  |
| 315 |  | 生活区地块通水 | 2d | 2026-05-21 | 2026-05-23 | 314 | 161d |  |
| 316 |  | 生活区地块通电 | 2d | 2026-05-21 | 2026-05-23 | 314 | 161d |  |
| 317 |  | PC场及图纸/开模确认 | 30d | 2026-05-03 | 2026-06-02 | 56 | 151d |  |
| 318 |  | 塔吊基础施工完成 | 3d | 2026-04-06 | 2026-04-09 | 68 | 205d |  |
| 319 |  | 临水临电布置完成 | 35d | 2026-04-03 | 2026-05-08 | 56FS-30d | 176d | finish no earlier than 2026-04-15 |
| 320 |  | 冲洗平台设置/重要道路硬化 | 6d | 2026-05-03 | 2026-05-09 | 56 | 175d |  |
| 321 |  | 围挡完成 | 20d | 2026-03-12 | 2026-03-31 | 56FS-60d | 213.12d | finish no earlier than 2026-03-31 |
| 322 |  | 材料采购及加工场布置 | 10d | 2026-05-03 | 2026-05-13 | 56 | 171d |  |
| 323 | 10.2 | **精装施工准备工作** | 64d | 2026-06-09 | 2026-08-12 |  | 80d |  |
| 324 |  | 材料选型定样完成 | 30d | 2026-06-09 | 2026-07-09 | 254 | 80d |  |
| 325 |  | 图纸二次深化完成 | 30d | 2026-06-09 | 2026-07-09 | 254 | 80d |  |
| 326 |  | 材料下单完成 | 4d | 2026-07-09 | 2026-07-13 | 324, 325, 330 | 80d |  |
| 327 |  | 材料排产完成 | 30d | 2026-07-13 | 2026-08-12 | 326 | 80d | finish no earlier than 2025-05-12 |
| 328 | 10.3 | **幕墙施工准备工作** | 85d | 2026-06-09 | 2026-09-02 |  | 59d |  |
| 329 |  | 材料定样完成 | 30d | 2026-06-09 | 2026-07-09 | 274 | 114d | finish no earlier than 2025-04-02 |
| 330 |  | 图纸二次深化完成 | 30d | 2026-06-09 | 2026-07-09 | 274 | 59d |  |
| 331 |  | 各材料开模完成 | 10d | 2026-07-09 | 2026-07-19 | 330 | 59d | finish no earlier than 2025-04-02 |
| 332 |  | 样板墙施工完成 | 45d | 2026-07-19 | 2026-09-02 | 331 | 59d | finish no earlier than 2025-04-02 |
| 333 |  | 部分材料提前下单 | 15d | 2026-07-09 | 2026-07-24 | 330 | 99d | finish no earlier than 2025-04-02 |
| 334 | 10.4 | **景观施工准备工作** | 45d | 2026-06-09 | 2026-07-24 |  | 99d |  |
| 335 |  | 材料定样完成 | 30d | 2026-06-09 | 2026-07-09 | 264 | 114d | finish no earlier than 2025-04-02 |
| 336 |  | 图纸二次深化完成 | 30d | 2026-06-09 | 2026-07-09 | 264 | 99d |  |
| 337 |  | 部分材料提前下单 | 15d | 2026-07-09 | 2026-07-24 | 336 | 99d |  |
| 338 | 10.5 | **4#(售楼处)施工计划** | 169d | 2026-05-15 | 2026-10-31 |  | 0d |  |
| 339 | 10.5.1 | **基础** | 57d | 2026-05-15 | 2026-07-11 |  | 0d |  |
| 340 |  | 打桩完成 | 10d | 2026-05-15 | 2026-05-25 | 60 | 0d |  |
| 341 |  | 桩基含放线施工(含7号楼南北单元之间地库)完成 | 12d | 2026-05-25 | 2026-06-06 | 340 | 144d | start no earlier than 2025-04-25 |
| 342 |  | 围护施工完成 | 15d | 2026-05-25 | 2026-06-09 | 340 | 0d |  |
| 343 |  | 桩基检测(降水及休止期)完成 | 3d | 2026-06-06 | 2026-06-09 | 341 | 144d |  |
| 344 |  | 土方开挖完成 | 10d | 2026-06-24 | 2026-07-04 | 342FS+15d | 0d |  |
| 345 |  | 清底及底板垫层完成 | 1d | 2026-07-04 | 2026-07-05 | 344 | 0d |  |
| 346 |  | 接桩、砖胎膜、防水施工完成 | 2d | 2026-07-05 | 2026-07-07 | 345 | 0d |  |
| 347 |  | 承台钢筋绑扎完成 | 2d | 2026-07-07 | 2026-07-09 | 346 | 0d |  |
| 348 |  | 底板钢筋绑扎完成 | 1d | 2026-07-09 | 2026-07-10 | 347 | 0d |  |
| 349 |  | 桩基验收完成 | 1d | 2026-07-10 | 2026-07-11 | 348 | 0d |  |
| 350 | 10.5.2 | **地下1层** | 10d | 2026-07-11 | 2026-07-21 |  | 0d |  |

| ID | WBS | Task | Duration | Start | Finish | Predecessors | Total float |
| --- | --- | --- | --- | --- | --- | --- | --- |
| 351 |  | 施工放线完成 | 1d | 2026-07-11 | 2026-07-12 | 349 | 111d |
| 352 |  | 电渣压力焊完成 | 1d | 2026-07-11 | 2026-07-12 | 349 | 111d |
| 353 |  | 墙柱钢筋绑扎完成 | 2d | 2026-07-11 | 2026-07-13 | 349 | 0d |
| 354 |  | 排架及墙模施工完成 | 3d | 2026-07-13 | 2026-07-16 | 353 | 0d |
| 355 |  | 顶板模板施工完成 | 2d | 2026-07-16 | 2026-07-18 | 354 | 0d |
| 356 |  | 钢筋施工完成 | 1d | 2026-07-18 | 2026-07-19 | 355 | 0d |
| 357 |  | 水电施工完成 | 1d | 2026-07-19 | 2026-07-20 | 356 | 0d |
| 358 |  | 混凝土浇筑完成 | 1d | 2026-07-20 | 2026-07-21 | 357 | 0d |
| 359 | 10.5.3 | **夹层** | 8d | 2026-07-21 | 2026-07-29 |  | 0d |
| 360 |  | 施工放线完成 | 1d | 2026-07-21 | 2026-07-22 | 358 | 101d |
| 361 |  | 电渣压力焊完成 | 1d | 2026-07-21 | 2026-07-22 | 358 | 101d |
| 362 |  | 墙柱钢筋绑扎完成 | 1d | 2026-07-21 | 2026-07-22 | 358 | 0d |
| 363 |  | 排架及墙模施工完成 | 2d | 2026-07-22 | 2026-07-24 | 362 | 0d |
| 364 |  | 顶板模板施工完成 | 2d | 2026-07-24 | 2026-07-26 | 363 | 0d |
| 365 |  | 钢筋施工完成 | 1d | 2026-07-26 | 2026-07-27 | 364 | 0d |
| 366 |  | 水电施工完成 | 1d | 2026-07-27 | 2026-07-28 | 365 | 0d |
| 367 |  | 混凝土浇筑完成 | 1d | 2026-07-28 | 2026-07-29 | 366 | 0d |
| 368 | 10.5.4 | **一层结构及二结构** | 40d | 2026-07-29 | 2026-09-07 |  | 0d |
| 369 |  | 施工放线完成 | 1d | 2026-07-29 | 2026-07-30 | 367 | 93d |
| 370 |  | 电渣压力焊完成 | 1d | 2026-07-29 | 2026-07-30 | 367 | 93d |
| 371 |  | 墙柱钢筋绑扎完成 | 1d | 2026-07-29 | 2026-07-30 | 367 | 0d |
| 372 |  | 排架及墙模施工完成 | 2d | 2026-07-30 | 2026-08-01 | 371 | 0d |
| 373 |  | 顶板模板施工完成 | 1d | 2026-08-01 | 2026-08-02 | 372 | 0d |
| 374 |  | 钢筋施工完成 | 1d | 2026-08-02 | 2026-08-03 | 373 | 0d |
| 375 |  | 水电施工完成 | 1d | 2026-08-03 | 2026-08-04 | 374 | 0d |
| 376 |  | 混凝土浇筑完成 | 1d | 2026-08-04 | 2026-08-05 | 375 | 0d |
| 377 |  | 模板拆除完成 | 1d | 2026-08-15 | 2026-08-16 | 376FS+10d, 358FS+10d, 367FS+10d | 0d |
| 378 |  | 放线完成 | 1d | 2026-08-16 | 2026-08-17 | 377 | 0d |
| 379 |  | 卫生间反坎凿毛完成 | 1d | 2026-08-17 | 2026-08-18 | 378 | 0d |
| 380 |  | 砌筑完成 | 3d | 2026-08-18 | 2026-08-21 | 379 | 0d |
| 381 |  | 水电管线二次开槽完成 | 3d | 2026-08-21 | 2026-08-24 | 380 | 0d |
| 382 |  | 水电管线排布完成 | 2d | 2026-08-24 | 2026-08-26 | 381 | 0d |
| 383 |  | 水电管线封堵完成 | 1d | 2026-08-26 | 2026-08-27 | 382 | 0d |
| 384 |  | 顶塞填缝完成 | 1d | 2026-08-28 | 2026-08-29 | 380FS+7d | 63d |
| 385 |  | 冲筋完成 | 1d | 2026-08-27 | 2026-08-28 | 383 | 0d |
| 386 |  | 内墙抹灰找平完成 | 2d | 2026-08-28 | 2026-08-30 | 385 | 0d |
| 387 |  | 内保温施工完成 | 3d | 2026-08-30 | 2026-09-02 | 386 | 0d |
| 388 |  | 挂网完成 | 2d | 2026-09-02 | 2026-09-04 | 387 | 0d |
| 389 |  | 批腻子完成 | 3d | 2026-09-04 | 2026-09-07 | 388 | 0d |
| 390 | 10.5.5 | **三层结构及二结构** | 40d | 2026-08-05 | 2026-09-14 |  | 15d |
| 391 |  | 施工放线完成 | 1d | 2026-08-05 | 2026-08-06 | 376 | 86d |
| 392 |  | 电渣压力焊完成 | 1d | 2026-08-05 | 2026-08-06 | 376 | 86d |
| 393 |  | 墙柱钢筋绑扎完成 | 1d | 2026-08-05 | 2026-08-06 | 376 | 15d |
| 394 |  | 排架及墙模施工完成 | 2d | 2026-08-06 | 2026-08-08 | 393 | 15d |
| 395 |  | 顶板模板施工完成 | 1d | 2026-08-08 | 2026-08-09 | 394 | 15d |
| 396 |  | 钢筋施工完成 | 1d | 2026-08-09 | 2026-08-10 | 395 | 15d |
| 397 |  | 水电施工完成 | 1d | 2026-08-10 | 2026-08-11 | 396 | 15d |
| 398 |  | 混凝土浇筑完成 | 1d | 2026-08-11 | 2026-08-12 | 397 | 15d |
| 399 |  | 模板拆除完成 | 1d | 2026-08-22 | 2026-08-23 | 398FS+10d, 358FS+10d, 367FS+10d | 15d |
| 400 |  | 放线完成 | 1d | 2026-08-23 | 2026-08-24 | 399 | 15d |
| 401 |  | 卫生间反坎凿毛完成 | 1d | 2026-08-24 | 2026-08-25 | 400 | 47d |
| 402 |  | 砌筑完成 | 3d | 2026-08-25 | 2026-08-28 | 401 | 47d |
| 403 |  | 水电管线二次开槽完成 | 3d | 2026-08-28 | 2026-08-31 | 402 | 47d |
| 404 |  | 水电管线排布完成 | 2d | 2026-08-31 | 2026-09-02 | 403 | 47d |
| 405 |  | 水电管线封堵完成 | 1d | 2026-09-02 | 2026-09-03 | 404 | 47d |
| 406 |  | 顶塞填缝完成 | 1d | 2026-09-04 | 2026-09-05 | 402FS+7d | 56d |
| 407 |  | 冲筋完成 | 1d | 2026-09-03 | 2026-09-04 | 405 | 47d |
| 408 |  | 内墙抹灰找平完成 | 2d | 2026-09-04 | 2026-09-06 | 407 | 47d |
| 409 |  | 内保温施工完成 | 3d | 2026-09-06 | 2026-09-09 | 408 | 47d |
| 410 |  | 挂网完成 | 2d | 2026-09-09 | 2026-09-11 | 409 | 47d |
| 411 |  | 批腻子完成 | 3d | 2026-09-11 | 2026-09-14 | 410 | 47d |
| 412 | 10.5.6 | **屋面楼梯间** | 33d | 2026-08-12 | 2026-09-14 |  | 47d |
| 413 |  | 施工放线完成 | 1d | 2026-08-12 | 2026-08-13 | 398 | 79d |
| 414 |  | 电渣压力焊完成 | 1d | 2026-08-12 | 2026-08-13 | 398 | 79d |
| 415 |  | 墙柱钢筋绑扎完成 | 1d | 2026-08-12 | 2026-08-13 | 398 | 47d |
| 416 |  | 排架及墙模施工完成 | 1d | 2026-08-13 | 2026-08-14 | 415 | 47d |
| 417 |  | 顶板模板施工完成 | 1d | 2026-08-14 | 2026-08-15 | 416 | 47d |
| 418 |  | 钢筋施工完成 | 1d | 2026-08-15 | 2026-08-16 | 417 | 47d |
| 419 |  | 水电施工完成 | 1d | 2026-08-16 | 2026-08-17 | 418 | 47d |
| 420 |  | 混凝土浇筑完成 | 1d | 2026-08-17 | 2026-08-18 | 419 | 47d |

| ID | WBS | Task | Duration | Start | Finish | Predecessors | Total float |
| --- | --- | --- | --- | --- | --- | --- | --- |
| 421 |  | 模板拆除完成 | 1d | 2026-08-28 | 2026-08-29 | 420FS+10d, 358FS+10d, 367FS+10d | 47d |
| 422 |  | 放线完成 | 1d | 2026-08-29 | 2026-08-30 | 421 | 47d |
| 423 |  | 砌筑完成 | 1d | 2026-08-30 | 2026-08-31 | 422 | 47d |
| 424 |  | 水电管线二次开槽完成 | 1d | 2026-08-31 | 2026-09-01 | 423 | 47d |
| 425 |  | 水电管线排布完成 | 1d | 2026-09-01 | 2026-09-02 | 424 | 47d |
| 426 |  | 水电管线封堵完成 | 1d | 2026-09-02 | 2026-09-03 | 425 | 47d |
| 427 |  | 顶塞填缝完成 | 1d | 2026-09-07 | 2026-09-08 | 423FS+7d | 53d |
| 428 |  | 冲筋完成 | 1d | 2026-09-03 | 2026-09-04 | 426 | 47d |
| 429 |  | 内墙抹灰找平完成 | 2d | 2026-09-04 | 2026-09-06 | 428 | 47d |
| 430 |  | 内保温施工完成 | 3d | 2026-09-06 | 2026-09-09 | 429 | 47d |
| 431 |  | 挂网完成 | 2d | 2026-09-09 | 2026-09-11 | 430 | 47d |
| 432 |  | 批腻子完成 | 3d | 2026-09-11 | 2026-09-14 | 431 | 47d |
| 433 | 10.5.7 | **屋面施工** | 6d | 2026-08-05 | 2026-08-11 |  | 81d |
| 434 |  | 屋面清理完成 | 1d | 2026-08-05 | 2026-08-06 | 376 | 86d |
| 435 |  | 屋面第一道防水完成 | 1d | 2026-08-05 | 2026-08-06 | 376 | 86d |
| 436 |  | 屋面第二道防水完成 | 1d | 2026-08-05 | 2026-08-06 | 376 | 81d |
| 437 |  | 屋面第三道防水完成 | 2d | 2026-08-06 | 2026-08-08 | 436 | 81d |
| 438 |  | 屋面保温完成 | 1d | 2026-08-08 | 2026-08-09 | 437 | 81d |
| 439 |  | 屋面保护层浇筑完成 | 1d | 2026-08-09 | 2026-08-10 | 438 | 81d |
| 440 |  | 屋面面层处理完成 | 1d | 2026-08-10 | 2026-08-11 | 439 | 81d |
| 441 | 10.5.8 | **幕墙工程** | 53d | 2026-08-24 | 2026-10-16 |  | 15d |
| 442 |  | 放线完成 | 2d | 2026-08-24 | 2026-08-26 | 400 | 15d |
| 443 |  | 预埋板完成 | 3d | 2026-08-26 | 2026-08-29 | 442 | 15d |
| 444 |  | 主龙骨安装完成 | 4d | 2026-08-29 | 2026-09-02 | 443 | 15d |
| 445 |  | 副龙骨安装完成 | 7d | 2026-09-03 | 2026-09-10 | 444SS+5d | 15d |
| 446 |  | 落架完成 | 1d | 2026-09-10 | 2026-09-11 | 445 | 15d |
| 447 |  | 回土+管线施工完成 | 7d | 2026-09-11 | 2026-09-18 | 446 | 15d |
| 448 |  | 材料排产 | 20d | 2026-08-26 | 2026-09-15 | 442 | 46d |
| 449 |  | 二次搭架子完成 | 1d | 2026-09-18 | 2026-09-19 | 447 | 15d |
| 450 |  | 面层安装完成 | 10d | 2026-09-19 | 2026-09-29 | 449 | 15d |
| 451 |  | 打胶收尾完成 | 1d | 2026-09-29 | 2026-09-30 | 450 | 31d |
| 452 |  | 二次落架完成 | 1d | 2026-09-29 | 2026-09-30 | 450 | 15d |
| 453 |  | 采光井施工完成 | 2d | 2026-09-30 | 2026-10-02 | 452 | 29d |
| 454 |  | 景观收尾完成 | 14d | 2026-09-30 | 2026-10-14 | 452 | 15d |
| 455 |  | 保洁完成 | 2d | 2026-10-14 | 2026-10-16 | 454 | 15d |
| 456 |  | 软装布置完成 | 0d | 2026-10-16 | 2026-10-16 | 455 | 15d |
| 457 | 10.5.9 | **精装工程** | 54d | 2026-09-07 | 2026-10-31 |  | 0d |
| 458 |  | 精装工作面移交完成 | 2d | 2026-09-07 | 2026-09-09 | 389 | 0d |
| 459 |  | 平面布置放线完成 | 1d | 2026-09-09 | 2026-09-10 | 458 | 0d |
| 460 |  | 水电点位、空调机电点位放线完成 | 1d | 2026-09-10 | 2026-09-11 | 459 | 50d |
| 461 |  | 水电布管预埋完成 | 3d | 2026-09-10 | 2026-09-13 | 459 | 0d |
| 462 |  | 机电设备安装完成 | 4d | 2026-09-13 | 2026-09-17 | 461SS+3d | 44d |
| 463 |  | 吊顶龙骨基层完成 | 6d | 2026-09-13 | 2026-09-19 | 461 | 0d |
| 464 |  | 吊顶封板完成 | 5d | 2026-09-19 | 2026-09-24 | 463 | 28d |
| 465 |  | 湿作业完成 | 8d | 2026-09-24 | 2026-10-02 | 464 | 28d |
| 466 |  | 涂料施工完成 | 5d | 2026-09-28 | 2026-10-03 | 465FF+1d | 28d |
| 467 |  | 饰面层下单完成 | 1d | 2026-09-19 | 2026-09-20 | 463 | 0d |
| 468 |  | 饰面层排产完成 | 20d | 2026-09-20 | 2026-10-10 | 467 | 0d |
| 469 |  | 饰面层完成 | 14d | 2026-09-30 | 2026-10-14 | 468FF+4d | 0d |
| 470 |  | 部品安装完成 | 3d | 2026-10-14 | 2026-10-17 | 469FF+3d | 0d |
| 471 |  | 灯具机电安装完成 | 2d | 2026-10-17 | 2026-10-19 | 470 | 0d |
| 472 |  | 保洁移交完成 | 2d | 2026-10-19 | 2026-10-21 | 471 | 0d |
| 473 |  | 软装完成 | 3d | 2026-10-21 | 2026-10-24 | 472 | 0d |
| 474 |  | 示范区开放 | 0d | 2026-10-31 | 2026-10-31 | 473FS+7d | 0d |

## Version 2 (saved 2026-02-03)

Note of the change: update procurement-pptx-generator

Last finish stays 2026-10-31.

Changed:

| ID | Task | Start | Finish | Duration | Total float | Other |
| --- | --- | --- | --- | --- | --- | --- |
| 1 | 土地获取 | 2025-12-10 → 2024-05-31 (-558d) | 2025-12-10 → 2024-05-31 (-558d) |  | 0d → 532.25d | constraint start no earlier than 2025-12-10 → start no earlier than 2024-05-31 |
| 2 | 投资交底及启动会 | 2025-12-10 → 2024-05-31 (-558d) | 2025-12-11 → 2024-06-01 (-558d) |  | 0d → 532.25d |  |
| 3 | 产品定位会 | 2025-12-11 → 2024-06-01 (-558d) | 2025-12-17 → 2024-06-07 (-558d) |  | 307d → 864.25d |  |
| 4 | 方案公示 | 2026-01-15 → 2025-12-21 (-25d) | 2026-01-16 → 2025-12-22 (-25d) |  | 237d → 262d |  |
| 5 | **方案批复** | 2026-01-16 → 2025-12-22 (-25d) | 2026-02-11 → 2026-01-17 (-25d) |  | 251d → 276d |  |
| 6 | **方案线下征询完成** | 2026-01-16 → 2025-12-22 (-25d) | 2026-01-26 → 2026-01-01 (-25d) |  | 251d → 276d |  |
| 7 | 镇政府征询完成 | 2026-01-16 → 2025-12-22 (-25d) | 2026-01-21 → 2025-12-27 (-25d) |  | 272d → 297d |  |
| 8 | 房管局征询完成 | 2026-01-16 → 2025-12-22 (-25d) | 2026-01-26 → 2026-01-01 (-25d) |  | 267d → 292d |  |
| 9 | 供电局征询 | 2026-01-16 → 2025-12-22 (-25d) | 2026-01-19 → 2025-12-25 (-25d) |  | 274d → 299d |  |
| 10 | 经委征询完成 | 2026-01-16 → 2025-12-22 (-25d) | 2026-01-26 → 2026-01-01 (-25d) |  | 267d → 292d |  |
| 11 | 方案完成线上报审 | 2026-01-16 → 2025-12-22 (-25d) | 2026-01-19 → 2025-12-25 (-25d) |  | 251d → 276d |  |
| 12 | **方案线上审批** | 2026-01-19 → 2025-12-25 (-25d) | 2026-02-11 → 2026-01-17 (-25d) |  | 251d → 276d |  |
| 13 | 绿化市容局审批完成 | 2026-01-19 → 2025-12-25 (-25d) | 2026-02-03 → 2026-01-09 (-25d) |  | 259d → 284d |  |
| 14 | 交警总队审批完成 | 2026-01-19 → 2025-12-25 (-25d) | 2026-02-03 → 2026-01-09 (-25d) |  | 251d → 276d |  |
| 15 | 交通委审批完成 | 2026-01-19 → 2025-12-25 (-25d) | 2026-02-03 → 2026-01-09 (-25d) |  | 251d → 276d |  |
| 16 | 抗震审批完成 | 2026-01-19 → 2025-12-25 (-25d) | 2026-01-29 → 2026-01-04 (-25d) |  | 256d → 281d |  |
| 17 | 民政审批完成 | 2026-01-19 → 2025-12-25 (-25d) | 2026-01-29 → 2026-01-04 (-25d) |  | 256d → 281d |  |
| 18 | 消防审批完成 | 2026-01-19 → 2025-12-25 (-25d) | 2026-01-29 → 2026-01-04 (-25d) |  | 256d → 281d |  |
| 19 | 电力审批完成 | 2026-01-19 → 2025-12-25 (-25d) | 2026-02-03 → 2026-01-09 (-25d) |  | 251d → 276d |  |
| 20 | 民防审批完成 | 2026-01-19 → 2025-12-25 (-25d) | 2026-02-03 → 2026-01-09 (-25d) |  | 251d → 276d |  |
| 21 | 房管审批完成 | 2026-01-19 → 2025-12-25 (-25d) | 2026-02-03 → 2026-01-09 (-25d) |  | 251d → 276d |  |
| 22 | 规土局审批（批复流程）完成 | 2026-02-03 → 2026-01-09 (-25d) | 2026-02-06 → 2026-01-12 (-25d) |  | 251d → 276d |  |
| 23 | 设计方案批复完成 | 2026-02-06 → 2026-01-12 (-25d) | 2026-02-11 → 2026-01-17 (-25d) |  | 251d → 276d |  |
| 24 | **经营方案评审** | 2026-01-16 → 2025-12-22 (-25d) | 2026-02-07 → 2026-01-13 (-25d) |  | 255d → 280d |  |
| 25 | 设计指标、配置锁定 | 2026-01-16 → 2025-12-22 (-25d) | 2026-01-17 → 2025-12-23 (-25d) |  | 268d → 293d |  |
| 26 | 目标成本锁定 | 2026-01-16 → 2025-12-22 (-25d) | 2026-01-30 → 2026-01-05 (-25d) |  | 255d → 280d |  |
| 27 | 开盘节奏、批次划分 | 2026-01-16 → 2025-12-22 (-25d) | 2026-01-30 → 2026-01-05 (-25d) |  | 255d → 280d |  |
| 28 | 工程策划初稿-开发周期、分批次 | 2026-01-16 → 2025-12-22 (-25d) | 2026-01-30 → 2026-01-05 (-25d) |  | 255d → 280d |  |
| 29 | 各部分任务书 | 2026-01-16 → 2025-12-22 (-25d) | 2026-01-30 → 2026-01-05 (-25d) |  | 255d → 280d |  |
| 30 | 合约规划锁定 | 2026-01-16 → 2025-12-22 (-25d) | 2026-01-30 → 2026-01-05 (-25d) |  | 255d → 280d |  |
| 31 | 经营方案评审 | 2026-01-30 → 2026-01-05 (-25d) | 2026-01-31 → 2026-01-06 (-25d) |  | 255d → 280d |  |
| 32 | 经营方案评审OA | 2026-01-31 → 2026-01-06 (-25d) | 2026-02-07 → 2026-01-13 (-25d) |  | 255d → 280d |  |
| 33 | **公开招投标工作** | 2025-12-10 → 2024-05-31 (-558d) | 2026-05-15 → 2026-04-20 (-25d) | 145d → 677.25d | 87d → 194d |  |
| 34 | **设计勘察公开招投标** | 2025-12-10 → 2024-05-31 (-558d) | 2026-01-27 → 2024-07-18 (-558d) |  | 249d → 806.25d |  |
| 35 | 1.编制设计招标文件初稿，提交建设单位内部审核流转2.预招标申请及其他前期用印资料，建设单位完成用印并返回给招标代理 | 2025-12-10 → 2024-05-31 (-558d) | 2025-12-20 → 2024-06-10 (-558d) |  | 249d → 806.25d |  |
| 36 | 1.预招标申请等资料送标办，待标办内部审批完成2.建设单位内部完成设计招标文件流转 | 2025-12-20 → 2024-06-10 (-558d) | 2025-12-23 → 2024-06-13 (-558d) |  | 249d → 806.25d |  |
| 37 | 发布设计预招标公告 | 2025-12-23 → 2024-06-13 (-558d) | 2025-12-24 → 2024-06-14 (-558d) |  | 249d → 806.25d |  |
| 38 | 接受网上报名 | 2025-12-24 → 2024-06-14 (-558d) | 2025-12-30 → 2024-06-20 (-558d) |  | 249d → 806.25d |  |
| 39 | 发补充招标文件（如有）（9点30前） | 2025-12-30 → 2024-06-20 (-558d) | 2025-12-31 → 2024-06-21 (-558d) |  | 249d → 806.25d |  |
| 40 | 开标（上午10:00时）完成 | 2025-12-31 → 2024-06-21 (-558d) | 2026-01-15 → 2024-07-06 (-558d) |  | 249d → 806.25d |  |
| 41 | 评标（视会议室预定情况微调）完成 | 2026-01-15 → 2024-07-06 (-558d) | 2026-01-16 → 2024-07-07 (-558d) |  | 249d → 806.25d |  |
| 42 | 中标候选人公示 | 2026-01-16 → 2024-07-07 (-558d) | 2026-01-19 → 2024-07-10 (-558d) |  | 266d → 823.25d |  |
| 43 | 完成监管备案 | 2026-01-19 → 2024-07-10 (-558d) | 2026-01-20 → 2024-07-11 (-558d) |  | 266d → 823.25d |  |
| 44 | 设计合同签约 | 2026-01-20 → 2024-07-11 (-558d) | 2026-01-27 → 2024-07-18 (-558d) |  | 266d → 823.25d |  |
| 45 | **总包公开招投标** |  | 2026-05-15 → 2026-04-20 (-25d) | 102d → 77d | 44d → 19d |  |
| 53 | 图纸算量，下午发补充文件 | 2026-03-18 → 2026-02-10 (-36d) | 2026-04-12 → 2026-03-18 (-25d) |  |  |  |
| 54 | 发施工招标补充文件（本次无）2点前 | 2026-04-12 → 2026-03-18 (-25d) | 2026-04-12 → 2026-03-18 (-25d) |  |  |  |
| 55 | 施工开标，下午2点开标 | 2026-04-12 → 2026-03-18 (-25d) | 2026-04-30 → 2026-04-05 (-25d) |  |  |  |
| 56 | 施工评标,发布中标公示 | 2026-04-30 → 2026-04-05 (-25d) | 2026-05-03 → 2026-04-08 (-25d) |  |  |  |
| 57 | 中标候选人公示 | 2026-05-03 → 2026-04-08 (-25d) | 2026-05-06 → 2026-04-11 (-25d) |  |  |  |
| 58 | 1、完成监管备案2、完善合同，并发布。发布72小时后可以合同备案. | 2026-05-06 → 2026-04-11 (-25d) | 2026-05-11 → 2026-04-16 (-25d) |  |  |  |
| 59 | 施工合同公示 | 2026-05-11 → 2026-04-16 (-25d) | 2026-05-14 → 2026-04-19 (-25d) |  |  |  |
| 60 | 施工合同网上备案，履约保函提前开 | 2026-05-14 → 2026-04-19 (-25d) | 2026-05-15 → 2026-04-20 (-25d) |  |  |  |
| 78 | **方案阶段** |  | 2026-02-26 → 2026-01-21 (-36d) | 91d → 66d | 25d → 0d |  |
| 79 | **建筑方案** |  | 2026-01-20 → 2025-12-26 (-25d) | 65d → 40d | 25d → 0d |  |
| 80 | 建筑方案单位确定 | 2025-12-11 → 2025-11-16 (-25d) | 2025-12-14 → 2025-11-19 (-25d) |  | 310d → 335d |  |
| 81 | 产品策划成果确认（物业类型及户型配比） | 2025-12-11 → 2025-11-16 (-25d) | 2025-12-18 → 2025-11-23 (-25d) |  |  |  |
| 82 | 建筑任务书编写完成 | 2025-12-18 → 2025-11-23 (-25d) | 2025-12-20 → 2025-11-25 (-25d) |  |  |  |
| 84 | 第一轮：确定规划总图初稿、户型选择及分布 | 2025-12-20 → 2025-11-25 (-25d) | 2025-12-30 → 2025-12-05 (-25d) |  | 232d → 257d |  |
| 85 | 第二轮：总图方案确定、户型深化设计、立面方向 | 2025-12-30 → 2025-12-05 (-25d) | 2026-01-06 → 2025-12-12 (-25d) |  | 237d → 262d |  |
| 86 | 第三轮：总图、户型、立面SKE模型汇报及确定 | 2026-01-06 → 2025-12-12 (-25d) | 2026-01-13 → 2025-12-19 (-25d) |  | 237d → 262d |  |
| 87 | 第四轮：总图、户型、立面SKE模型汇报及确定 | 2026-01-09 → 2025-12-15 (-25d) | 2026-01-16 → 2025-12-22 (-25d) |  |  |  |
| 88 | 建筑提资至景观进行概念方案设计、提资室内户型优化完成 | 2026-01-16 → 2025-12-22 (-25d) | 2026-01-19 → 2025-12-25 (-25d) |  | 257d → 282d |  |
| 89 | 产品配置标准及成本目标确定 | 2026-01-06 → 2025-12-12 (-25d) | 2026-01-20 → 2025-12-26 (-25d) |  | 273d → 298d |  |
| 90 | **精装方案** | 2025-12-18 → 2025-11-23 (-25d) | 2026-01-31 → 2026-01-06 (-25d) |  | 260d → 285d |  |
| 91 | 室内设计任务书确定（定档，风格及配置） | 2025-12-18 → 2025-11-23 (-25d) | 2025-12-21 → 2025-11-26 (-25d) |  | 260d → 285d |  |
| 92 | 室内设计单位比选及合同OA审批 | 2025-12-21 → 2025-11-26 (-25d) | 2025-12-28 → 2025-12-03 (-25d) |  | 260d → 285d |  |
| 93 | 住宅户型配合及平面优化 | 2025-12-28 → 2025-12-03 (-25d) | 2026-01-18 → 2025-12-24 (-25d) |  | 275d → 300d |  |
| 94 | 样板房售楼处或精装概念提案（含配置标准确认） | 2025-12-28 → 2025-12-03 (-25d) | 2026-01-04 → 2025-12-10 (-25d) |  | 260d → 285d |  |
| 95 | 个性样板房售楼处或精装深化方案汇报（平面及效果图） | 2026-01-16 → 2025-12-22 (-25d) | 2026-01-31 → 2026-01-06 (-25d) |  | 248d → 273d |  |

| ID | Task | Start | Finish | Duration | Total float |
| --- | --- | --- | --- | --- | --- |
| 96 | 精装修样板房深化方案汇报（平面及效果图） | 2026-01-16 → 2025-12-22 (-25d) | 2026-01-31 → 2026-01-06 (-25d) |  | 248d → 273d |
| 97 | **景观方案** | 2025-12-18 → 2025-11-23 (-25d) | 2026-01-26 → 2026-01-01 (-25d) |  | 229d → 254d |
| 98 | 景观设计任务书确定 | 2025-12-18 → 2025-11-23 (-25d) | 2025-12-20 → 2025-11-25 (-25d) |  | 235d → 260d |
| 99 | 景观设计单位比选及合同签订 | 2025-12-20 → 2025-11-25 (-25d) | 2025-12-27 → 2025-12-02 (-25d) |  | 235d → 260d |
| 100 | 第一轮：景观全区含示范区概念方案汇报 | 2025-12-30 → 2025-12-05 (-25d) | 2026-01-13 → 2025-12-19 (-25d) |  | 232d → 257d |
| 101 | 第二轮：景观示范区深化方案汇报 | 2026-01-16 → 2025-12-22 (-25d) | 2026-01-26 → 2026-01-01 (-25d) |  | 229d → 254d |
| 102 | **结构方案** | 2026-01-13 → 2025-11-16 (-58d) | 2026-02-26 → 2026-01-21 (-36d) | 33d → 66d | 237d → 272d |
| 103 | 结构方案与布局技术落位汇报 | 2026-01-13 → 2025-12-19 (-25d) | 2026-01-15 → 2025-12-21 (-25d) |  | 237d → 262d |
| 104 | 桩基比选完成 | 2026-01-15 → 2025-12-21 (-25d) | 2026-01-22 → 2025-12-28 (-25d) |  | 237d → 262d |
| 105 | 设计前试桩 | 2026-01-22 → 2025-12-28 (-25d) | 2026-02-05 → 2026-01-11 (-25d) |  | 237d → 262d |
| 106 | 桩基招标清单 | 2026-01-19 → 2025-11-16 (-64d) | 2026-01-26 → 2025-11-23 (-64d) |  | 267d → 331d |
| 107 | 围护方案初判 | 2026-01-19 → 2025-11-16 (-64d) | 2026-01-26 → 2025-11-23 (-64d) |  | 267d → 331d |
| 108 | PC技术选型专题汇报（如有） | 2026-02-05 → 2026-01-11 (-25d) | 2026-02-26 → 2026-01-21 (-36d) |  | 237d → 262d |
| 109 | **机电方案** | 2025-12-30 → 2025-12-05 (-25d) | 2026-01-29 → 2026-01-04 (-25d) |  | 264d → 289d |
| 110 | 电梯选型专题汇报 | 2025-12-30 → 2025-12-05 (-25d) | 2026-01-06 → 2025-12-12 (-25d) |  | 287d → 312d |
| 111 | 智能化方案汇报（第一轮） | 2025-12-30 → 2025-12-05 (-25d) | 2026-01-09 → 2025-12-15 (-25d) |  | 264d → 289d |
| 112 | 智能化方案汇报（第二轮） | 2026-01-09 → 2025-12-15 (-25d) | 2026-01-29 → 2026-01-04 (-25d) |  | 264d → 289d |
| 113 | **扩初设计** | 2025-12-20 → 2025-11-25 (-25d) | 2026-03-08 → 2026-01-31 (-36d) |  |  |
| 114 | **建筑扩初设计** | 2025-12-20 → 2025-11-25 (-25d) | 2026-03-08 → 2026-01-31 (-36d) |  |  |
| 115 | 方案阶段总图日照分析定稿（外部单位计算） | 2026-01-16 → 2025-12-22 (-25d) | 2026-02-02 → 2026-01-08 (-25d) |  | 260d → 285d |
| 116 | 方案阶段计容面积预测及可售面积预测 | 2026-01-16 → 2025-12-22 (-25d) | 2026-01-23 → 2025-12-29 (-25d) |  | 270d → 295d |
| 117 | 平面、立面深化、所有单体立面细节推敲 | 2025-12-30 → 2025-12-05 (-25d) | 2026-01-13 → 2025-12-19 (-25d) |  | 256d → 281d |
| 118 | 方案设计提资成果完成及审核,同步提资室内落实点位、景观进行示范区深化设计 | 2026-01-19 → 2025-12-25 (-25d) | 2026-02-02 → 2026-01-08 (-25d) |  | 257d → 282d |
| 119 | PC技术选型专题汇报 | 2026-02-02 → 2026-01-08 (-25d) | 2026-02-05 → 2026-01-11 (-25d) |  | 257d → 282d |
| 120 | 报规文本初稿完成 | 2025-12-20 → 2025-11-25 (-25d) | 2025-12-27 → 2025-12-02 (-25d) |  |  |
| 121 | 方案汇报属地政府完成 | 2025-12-27 → 2025-12-02 (-25d) | 2025-12-30 → 2025-12-05 (-25d) |  | 294d → 319d |
| 122 | 规划预征询完成 | 2025-12-27 → 2025-12-02 (-25d) | 2026-01-06 → 2025-12-12 (-25d) |  |  |
| 123 | 交通预征询完成 | 2025-12-27 → 2025-12-02 (-25d) | 2026-01-06 → 2025-12-12 (-25d) |  | 287d → 312d |
| 124 | 交警征询完成 | 2025-12-27 → 2025-12-02 (-25d) | 2026-01-06 → 2025-12-12 (-25d) |  | 287d → 312d |
| 125 | 环卫预征询完成 | 2025-12-27 → 2025-12-02 (-25d) | 2026-01-06 → 2025-12-12 (-25d) |  | 287d → 312d |
| 126 | 方案汇报规划局完成 | 2026-01-06 → 2025-12-12 (-25d) | 2026-01-09 → 2025-12-15 (-25d) |  |  |
| 127 | 报批文本及相关报建成果（方案报建图） | 2026-01-09 → 2025-12-15 (-25d) | 2026-01-14 → 2025-12-20 (-25d) |  | 237d → 262d |
| 128 | 方案公示 | 2026-01-14 → 2025-12-20 (-25d) | 2026-01-15 → 2025-12-21 (-25d) |  | 237d → 262d |
| 129 | 第一轮结构布置汇报会（示范区+户型） | 2026-01-13 → 2025-12-19 (-25d) | 2026-01-16 → 2025-12-22 (-25d) |  | 259d → 284d |
| 130 | 第一轮车库汇报会 | 2026-01-16 → 2025-12-22 (-25d) | 2026-01-18 → 2025-12-24 (-25d) |  | 259d → 284d |
| 131 | 首层平面图初稿提资完成 | 2025-12-27 → 2025-12-02 (-25d) | 2026-01-03 → 2025-12-09 (-25d) |  | 290d → 315d |
| 132 | 报批文本及相关报建成果（方案报建图） | 2026-01-16 → 2025-12-22 (-25d) | 2026-01-19 → 2025-12-25 (-25d) |  | 274d → 299d |
| 133 | 建筑落实户型点位初稿并反提室内 | 2026-01-16 → 2025-12-22 (-25d) | 2026-01-23 → 2025-12-29 (-25d) |  | 270d → 295d |
| 134 | 示范区建筑方案深化汇报（南示范区修改完成的方案） | 2026-01-13 → 2025-12-19 (-25d) | 2026-01-27 → 2026-01-02 (-25d) |  | 266d → 291d |
| 135 | 立面分色汇报及成本优化汇报 | 2026-01-13 → 2025-12-19 (-25d) | 2026-01-27 → 2026-01-02 (-25d) |  | 256d → 281d |
| 136 | 多专业合模方案汇报 | 2026-02-26 → 2026-01-21 (-36d) | 2026-03-01 → 2026-01-24 (-36d) |  | 237d → 262d |
| 137 | 定妆效果图汇报及第一次材料样板汇报 | 2026-03-01 → 2026-01-24 (-36d) | 2026-03-08 → 2026-01-31 (-36d) |  | 237d → 262d |
| 138 | **结构扩初设计** | 2026-01-16 → 2025-12-22 (-25d) | 2026-02-03 → 2026-01-09 (-25d) |  | 259d → 284d |
| 139 | 终版结构布置汇报 | 2026-01-16 → 2025-12-22 (-25d) | 2026-01-23 → 2025-12-29 (-25d) |  | 268d → 293d |
| 140 | 终版地库落地汇报 | 2026-01-18 → 2025-12-24 (-25d) | 2026-01-25 → 2025-12-31 (-25d) |  | 259d → 284d |
| 141 | 扩初技术方案评审及设计完成（地上） | 2026-01-23 → 2025-12-29 (-25d) | 2026-01-25 → 2025-12-31 (-25d) |  | 268d → 293d |
| 142 | 扩初技术方案评审及设计完成（地库） | 2026-01-25 → 2025-12-31 (-25d) | 2026-01-27 → 2026-01-02 (-25d) |  | 259d → 284d |
| 143 | 结构扩初图完成 | 2026-01-27 → 2026-01-02 (-25d) | 2026-02-03 → 2026-01-09 (-25d) |  | 259d → 284d |
| 144 | **机电扩初设计** | 2026-01-16 → 2025-12-22 (-25d) | 2026-02-06 → 2026-01-12 (-25d) |  | 240d → 265d |
| 145 | 精装修点位提资 | 2026-01-16 → 2025-12-22 (-25d) | 2026-01-31 → 2026-01-06 (-25d) |  | 240d → 265d |
| 146 | 机电扩初设计 | 2026-01-31 → 2026-01-06 (-25d) | 2026-02-06 → 2026-01-12 (-25d) |  | 256d → 281d |
| 147 | **精装修扩初设计** | 2026-01-31 → 2026-01-06 (-25d) | 2026-02-25 → 2026-01-20 (-36d) |  | 248d → 273d |
| 148 | 售楼处砌筑水电定稿，提交建筑（点位确认初稿） | 2026-01-31 → 2026-01-06 (-25d) | 2026-02-25 → 2026-01-20 (-36d) |  | 248d → 273d |
| 149 | 住宅砌筑水电定稿，提交建筑（点位确认定稿） | 2026-01-31 → 2026-01-06 (-25d) | 2026-02-25 → 2026-01-20 (-36d) |  | 248d → 273d |
| 150 | **景观扩初设计** | 2026-01-26 → 2026-01-01 (-25d) | 2026-02-09 → 2026-01-15 (-25d) |  | 229d → 254d |
| 151 | 示范区景观扩初设计完成及成本测算 | 2026-01-26 → 2026-01-01 (-25d) | 2026-02-09 → 2026-01-15 (-25d) |  | 229d → 254d |
| 152 | **施工图阶段** |  | 2026-03-18 → 2026-03-08 (-10d) | 111d → 101d | 61d → 36d |
| 153 | **建筑图** |  | 2026-03-15 → 2026-02-07 (-36d) | 108d → 83d | 61d → 36d |
| 154 | 节能计算完成 | 2026-01-16 → 2025-12-22 (-25d) | 2026-01-23 → 2025-12-29 (-25d) |  | 253d → 278d |
| 155 | 保温体系确定 | 2026-01-23 → 2025-12-29 (-25d) | 2026-01-27 → 2026-01-02 (-25d) |  | 261d → 286d |
| 156 | 工程做法表 | 2026-01-27 → 2026-01-02 (-25d) | 2026-02-01 → 2026-01-07 (-25d) |  | 261d → 286d |
| 157 | PC拆分图完成 | 2026-01-16 → 2025-12-22 (-25d) | 2026-01-23 → 2025-12-29 (-25d) |  | 250d → 275d |
| 158 | PC深化图完成 | 2026-01-23 → 2025-12-29 (-25d) | 2026-02-23 → 2026-01-18 (-36d) |  | 250d → 275d |
| 159 | 平面图终稿完成 | 2026-01-16 → 2025-12-22 (-25d) | 2026-01-26 → 2026-01-01 (-25d) |  |  |
| 160 | 建筑平立剖 | 2026-01-26 → 2026-01-01 (-25d) | 2026-02-03 → 2026-01-09 (-25d) |  |  |
| 161 | 施工图技术评审及审图（第一波内审） | 2026-01-16 → 2025-12-22 (-25d) | 2026-02-10 → 2026-01-16 (-25d) |  |  |
| 162 | 施工图阶段计容面积预测及可售面积预测 | 2026-02-10 → 2026-01-16 (-25d) | 2026-02-28 → 2026-01-23 (-36d) |  | 245d → 270d |
| 163 | 施工图内部招标、外部送审图完成（含PC拆解图） | 2026-02-10 → 2026-01-16 (-25d) | 2026-02-28 → 2026-01-23 (-36d) |  | 245d → 270d |
| 164 | 报建施工图完成 | 2026-02-10 → 2026-01-16 (-25d) | 2026-03-13 → 2026-02-05 (-36d) |  |  |
| 165 | 施工图定稿（蓝图签发）（全套施工图）审图合格证 | 2026-03-13 → 2026-02-05 (-36d) | 2026-03-15 → 2026-02-07 (-36d) |  |  |

| ID | Task | Start | Finish | Duration | Total float |
| --- | --- | --- | --- | --- | --- |
| 167 | **结构图** | 2026-01-16 → 2025-11-16 (-61d) | 2026-03-18 → 2026-02-10 (-36d) | 50d → 86d | 18d → 54d |
| 168 | 物探完成 | 2026-01-16 → 2025-11-16 (-61d) | 2026-01-21 → 2025-11-21 (-61d) |  | 262d → 323d |
| 169 | 初步勘察完成 | 2026-01-19 → 2025-11-16 (-64d) | 2026-01-26 → 2025-11-23 (-64d) |  | 267d → 331d |
| 170 | 详细勘察完成 | 2026-01-16 → 2025-11-16 (-61d) | 2026-01-30 → 2025-11-30 (-61d) |  | 249d → 310d |
| 171 | 桩基施工图完成 | 2026-01-30 → 2025-11-30 (-61d) | 2026-02-24 → 2025-12-14 (-72d) |  | 249d → 310d |
| 172 | 围护施工图完成 | 2026-01-30 → 2025-11-30 (-61d) | 2026-02-09 → 2025-12-10 (-61d) |  | 253d → 314d |
| 173 | 单体楼栋结构图完成 | 2026-02-03 → 2026-01-09 (-25d) | 2026-02-24 → 2026-01-19 (-36d) |  |  |
| 174 | 地库结构图完成 | 2026-02-03 → 2026-01-09 (-25d) | 2026-02-24 → 2026-01-19 (-36d) |  | 249d → 274d |
| 175 | 后浇带与现场工程策划耦合 | 2026-02-24 → 2026-01-19 (-36d) | 2026-03-06 → 2026-01-29 (-36d) |  |  |
| 176 | 报建施工图完成 | 2026-03-06 → 2026-01-29 (-36d) | 2026-03-17 → 2026-02-09 (-36d) |  |  |
| 177 | 施工图定稿（蓝图签发）（全套施工图）审图合格证完成 | 2026-03-17 → 2026-02-09 (-36d) | 2026-03-18 → 2026-02-10 (-36d) |  |  |
| 178 | **机电图** | 2026-01-27 → 2026-01-06 (-21d) | 2026-03-16 → 2026-03-08 (-8d) | 37d → 50d | 229d → 237d |
| 179 | 机电图纸初稿完成 | 2026-01-31 → 2026-01-06 (-25d) | 2026-02-07 → 2026-01-13 (-25d) |  | 240d → 265d |
| 180 | 给排水图纸初稿完成 | 2026-01-31 → 2026-01-06 (-25d) | 2026-02-07 → 2026-01-13 (-25d) |  | 240d → 265d |
| 181 | 机电图纸第一版 | 2026-02-07 → 2026-01-13 (-25d) | 2026-02-23 → 2026-01-18 (-36d) |  | 240d → 265d |
| 182 | 给排水图纸第一版 | 2026-02-07 → 2026-01-13 (-25d) | 2026-02-23 → 2026-01-18 (-36d) |  | 240d → 265d |
| 183 | 机电图纸第二版 | 2026-02-23 → 2026-01-18 (-36d) | 2026-03-05 → 2026-01-28 (-36d) |  | 240d → 265d |
| 184 | 给排水图纸第二版 | 2026-02-23 → 2026-01-18 (-36d) | 2026-03-05 → 2026-01-28 (-36d) |  | 240d → 265d |
| 185 | 外立面机电图合模 | 2026-02-03 → 2026-01-09 (-25d) | 2026-02-10 → 2026-01-16 (-25d) |  | 252d → 277d |
| 186 | 消防施工图完成 | 2026-02-03 → 2026-01-09 (-25d) | 2026-03-07 → 2026-01-30 (-36d) |  | 238d → 263d |
| 187 | 智能化配置提资 | 2026-02-03 → 2026-01-09 (-25d) | 2026-02-10 → 2026-01-16 (-25d) |  | 238d → 263d |
| 188 | 智能化施工图完成 | 2026-02-10 → 2026-01-16 (-25d) | 2026-03-07 → 2026-01-30 (-36d) |  | 238d → 263d |
| 191 | 空调施工图完成 | 2026-01-31 → 2026-01-06 (-25d) | 2026-02-25 → 2026-01-20 (-36d) |  | 248d → 273d |
| 192 | 地暖施工图完成 | 2026-01-31 → 2026-01-06 (-25d) | 2026-02-25 → 2026-01-20 (-36d) |  | 248d → 273d |
| 193 | 雨污图纸完成 | 2026-02-09 → 2026-01-15 (-25d) | 2026-03-02 → 2026-01-25 (-36d) |  | 229d → 254d |
| 194 | 燃气图纸完成 | 2026-02-09 → 2026-01-15 (-25d) | 2026-02-27 → 2026-01-22 (-36d) |  | 232d → 257d |
| 195 | 室外给水图纸完成 | 2026-02-09 → 2026-01-15 (-25d) | 2026-02-27 → 2026-01-22 (-36d) |  | 232d → 257d |
| 196 | 电力图纸完成 | 2026-02-09 → 2026-01-31 (-9d) | 2026-03-02 → 2026-02-10 (-20d) |  | 229d → 238d |
| 197 | 室外综合管网设计初稿完成（设计院） | 2026-03-02 → 2026-02-10 (-20d) | 2026-03-16 → 2026-03-07 (-9d) |  | 229d → 238d |
| 198 | 光伏图纸 | 2026-02-07 → 2026-01-29 (-9d) | 2026-03-04 → 2026-02-23 (-9d) |  | 241d → 250d |
| 199 | 充电桩图纸完成 | 2026-02-07 → 2026-01-13 (-25d) | 2026-03-04 → 2026-01-27 (-36d) |  | 241d → 266d |
| 200 | **外立面深化图** | 2026-01-16 → 2025-12-22 (-25d) | 2026-03-08 → 2026-01-31 (-36d) |  | 237d → 262d |
| 201 | 外立面成本耦合优化 | 2026-01-16 → 2025-12-22 (-25d) | 2026-01-31 → 2026-01-06 (-25d) |  | 237d → 262d |
| 202 | 方案单位终版提资 | 2026-01-31 → 2026-01-06 (-25d) | 2026-02-05 → 2026-01-11 (-25d) |  | 237d → 262d |
| 203 | 幕墙关键节点图 | 2026-02-05 → 2026-01-11 (-25d) | 2026-02-23 → 2026-01-18 (-36d) |  | 240d → 265d |
| 204 | 幕墙平立剖初稿 | 2026-02-23 → 2026-01-18 (-36d) | 2026-03-02 → 2026-01-25 (-36d) |  | 240d → 265d |
| 205 | 示范区幕墙施工图 | 2026-02-05 → 2026-01-11 (-25d) | 2026-03-08 → 2026-01-31 (-36d) |  | 237d → 262d |
| 206 | 幕墙施工图完成 | 2026-03-02 → 2026-01-25 (-36d) | 2026-03-05 → 2026-01-28 (-36d) |  | 240d → 265d |
| 207 | 涂料施工图完成 | 2026-02-05 → 2026-01-11 (-25d) | 2026-03-03 → 2026-01-26 (-36d) |  | 242d → 267d |
| 208 | 线条施工图完成 | 2026-02-05 → 2026-01-11 (-25d) | 2026-03-03 → 2026-01-26 (-36d) |  | 242d → 267d |
| 209 | 门窗选型及配置确定 | 2026-02-05 → 2026-01-11 (-25d) | 2026-02-08 → 2026-01-14 (-25d) |  | 240d → 265d |
| 210 | 门窗施工图完成 | 2026-02-08 → 2026-01-14 (-25d) | 2026-03-05 → 2026-01-28 (-36d) |  | 240d → 265d |
| 211 | 栏杆选型及配置确定 | 2026-02-05 → 2026-01-11 (-25d) | 2026-02-08 → 2026-01-14 (-25d) |  | 240d → 265d |
| 212 | 栏杆施工图完成 | 2026-02-08 → 2026-01-14 (-25d) | 2026-03-05 → 2026-01-28 (-36d) |  | 240d → 265d |
| 213 | 单元门提资 | 2026-02-05 → 2026-01-11 (-25d) | 2026-02-23 → 2026-01-18 (-36d) |  | 250d → 275d |
| 214 | 单元门施工图完成 | 2026-02-05 → 2026-01-11 (-25d) | 2026-03-02 → 2026-01-25 (-36d) |  | 243d → 268d |
| 215 | **结构图** | 2026-01-16 → 2025-11-16 (-61d) | 2026-03-15 → 2026-02-07 (-36d) | 47d → 83d | 3d → 39d |
| 216 | 物探完成 | 2026-01-16 → 2025-11-16 (-61d) | 2026-01-21 → 2025-11-21 (-61d) |  | 262d → 323d |
| 217 | 初步勘察完成 | 2026-01-19 → 2025-11-16 (-64d) | 2026-01-26 → 2025-11-23 (-64d) |  | 267d → 331d |
| 218 | 详细勘察完成 | 2026-01-16 → 2025-11-16 (-61d) | 2026-01-30 → 2025-11-30 (-61d) |  | 249d → 310d |
| 219 | 桩基施工图完成 | 2026-01-30 → 2025-11-30 (-61d) | 2026-02-24 → 2025-12-14 (-72d) |  | 249d → 310d |
| 220 | 围护施工图完成 | 2026-01-30 → 2025-11-30 (-61d) | 2026-02-09 → 2025-12-10 (-61d) |  | 253d → 314d |
| 221 | 节能计算完成 | 2026-01-16 → 2025-12-22 (-25d) | 2026-01-23 → 2025-12-29 (-25d) |  | 261d → 286d |
| 222 | 保温体系确定 | 2026-01-23 → 2025-12-29 (-25d) | 2026-01-27 → 2026-01-02 (-25d) |  | 261d → 286d |
| 223 | 工程做法表 | 2026-01-27 → 2026-01-02 (-25d) | 2026-02-01 → 2026-01-07 (-25d) |  | 261d → 286d |
| 224 | PC拆分图完成 | 2026-01-16 → 2025-12-22 (-25d) | 2026-01-23 → 2025-12-29 (-25d) |  | 249d → 274d |
| 225 | PC深化图完成 | 2026-01-23 → 2025-12-29 (-25d) | 2026-02-23 → 2026-01-18 (-36d) |  | 249d → 274d |
| 226 | 首层平面图终稿完成 | 2026-01-16 → 2025-12-22 (-25d) | 2026-01-30 → 2026-01-05 (-25d) |  | 263d → 288d |
| 227 | 施工图技术评审及审图（第一波内审） | 2026-01-16 → 2025-12-22 (-25d) | 2026-02-10 → 2026-01-16 (-25d) |  |  |
| 228 | 施工图阶段计容面积预测及可售面积预测 | 2026-02-10 → 2026-01-16 (-25d) | 2026-02-28 → 2026-01-23 (-36d) |  | 245d → 270d |
| 229 | 施工图内部招标、外部送审图完成（含PC拆解图） | 2026-02-10 → 2026-01-16 (-25d) | 2026-02-28 → 2026-01-23 (-36d) |  | 245d → 270d |
| 230 | 报建施工图完成 | 2026-02-10 → 2026-01-16 (-25d) | 2026-03-13 → 2026-02-05 (-36d) |  |  |
| 231 | 施工图定稿（蓝图签发）（全套施工图）审图合格证 | 2026-03-13 → 2026-02-05 (-36d) | 2026-03-15 → 2026-02-07 (-36d) |  |  |
| 232 | PC深化图签发完成 | 2026-02-23 → 2026-01-18 (-36d) | 2026-02-24 → 2026-01-19 (-36d) |  | 249d → 274d |
| 233 | 室外综合管网设计初稿完成（设计院） | 2026-01-16 → 2025-12-22 (-25d) | 2026-02-26 → 2026-01-21 (-36d) |  | 232d → 257d |
| 234 | 室外综合管网设计终稿完成（汇总外部单位图纸） | 2026-02-26 → 2026-01-21 (-36d) | 2026-03-13 → 2026-02-05 (-36d) |  | 232d → 257d |
| 235 | **总包内部招标工作** | 2026-05-03 → 2026-04-08 (-25d) | 2026-06-23 → 2026-05-29 (-25d) |  | 59d → 84d |
| 236 | **土方单位确定** | 2026-05-03 → 2026-04-08 (-25d) | 2026-05-31 → 2026-05-06 (-25d) |  | 153d → 178d |
| 237 | 单位推荐完成 | 2026-05-03 → 2026-04-08 (-25d) | 2026-05-05 → 2026-04-10 (-25d) |  | 177d → 202d |
| 238 | 单位考察完成 | 2026-05-05 → 2026-04-10 (-25d) | 2026-05-06 → 2026-04-11 (-25d) |  | 177d → 202d |

| ID | Task | Start | Finish | Duration | Total float |
| --- | --- | --- | --- | --- | --- |
| 239 | 单位入围完成 | 2026-05-06 → 2026-04-11 (-25d) | 2026-05-07 → 2026-04-12 (-25d) |  | 177d → 202d |
| 240 | 技术标完成 | 2026-05-03 → 2026-04-08 (-25d) | 2026-05-05 → 2026-04-10 (-25d) |  | 179d → 204d |
| 241 | 商务标完成 | 2026-05-03 → 2026-04-08 (-25d) | 2026-05-10 → 2026-04-15 (-25d) |  | 153d → 178d |
| 242 | 发标完成 | 2026-05-10 → 2026-04-15 (-25d) | 2026-05-11 → 2026-04-16 (-25d) |  | 153d → 178d |
| 243 | 回标完成 | 2026-05-11 → 2026-04-16 (-25d) | 2026-05-16 → 2026-04-21 (-25d) |  | 153d → 178d |
| 244 | 定标完成 | 2026-05-16 → 2026-04-21 (-25d) | 2026-05-17 → 2026-04-22 (-25d) |  | 153d → 178d |
| 245 | 签署合同完成 | 2026-05-17 → 2026-04-22 (-25d) | 2026-05-31 → 2026-05-06 (-25d) |  | 153d → 178d |
| 246 | **示范区精装单位确定** | 2026-05-03 → 2026-04-08 (-25d) | 2026-06-23 → 2026-05-29 (-25d) |  | 80d → 105d |
| 247 | 单位推荐完成 | 2026-05-03 → 2026-04-08 (-25d) | 2026-05-13 → 2026-04-18 (-25d) |  | 167d → 192d |
| 248 | 单位考察完成 | 2026-05-13 → 2026-04-18 (-25d) | 2026-05-15 → 2026-04-20 (-25d) |  | 167d → 192d |
| 249 | 单位入围完成 | 2026-05-15 → 2026-04-20 (-25d) | 2026-05-17 → 2026-04-22 (-25d) |  | 167d → 192d |
| 250 | 技术标完成 | 2026-05-03 → 2026-04-08 (-25d) | 2026-05-14 → 2026-04-19 (-25d) |  | 170d → 195d |
| 251 | 商务标完成 | 2026-05-03 → 2026-04-08 (-25d) | 2026-06-02 → 2026-05-08 (-25d) |  | 80d → 105d |
| 252 | 发标完成 | 2026-06-02 → 2026-05-08 (-25d) | 2026-06-03 → 2026-05-09 (-25d) |  | 80d → 105d |
| 253 | 回标完成 | 2026-06-03 → 2026-05-09 (-25d) | 2026-06-08 → 2026-05-14 (-25d) |  | 80d → 105d |
| 254 | 定标完成 | 2026-06-08 → 2026-05-14 (-25d) | 2026-06-09 → 2026-05-15 (-25d) |  | 80d → 105d |
| 255 | 签署合同完成 | 2026-06-09 → 2026-05-15 (-25d) | 2026-06-23 → 2026-05-29 (-25d) |  | 130d → 155d |
| 256 | **示范区景观单位确定** | 2026-05-03 → 2026-04-08 (-25d) | 2026-06-23 → 2026-05-29 (-25d) |  | 99d → 124d |
| 257 | 单位推荐完成 | 2026-05-13 → 2026-04-18 (-25d) | 2026-05-23 → 2026-04-28 (-25d) |  | 157d → 182d |
| 258 | 单位考察完成 | 2026-05-23 → 2026-04-28 (-25d) | 2026-05-25 → 2026-04-30 (-25d) |  | 157d → 182d |
| 259 | 单位入围完成 | 2026-05-25 → 2026-04-30 (-25d) | 2026-05-27 → 2026-05-02 (-25d) |  | 157d → 182d |
| 260 | 技术标完成 | 2026-05-03 → 2026-04-08 (-25d) | 2026-05-14 → 2026-04-19 (-25d) |  | 170d → 195d |
| 261 | 商务标完成 | 2026-05-03 → 2026-04-08 (-25d) | 2026-06-02 → 2026-05-08 (-25d) |  | 99d → 124d |
| 262 | 发标完成 | 2026-06-02 → 2026-05-08 (-25d) | 2026-06-03 → 2026-05-09 (-25d) |  | 99d → 124d |
| 263 | 回标完成 | 2026-06-03 → 2026-05-09 (-25d) | 2026-06-08 → 2026-05-14 (-25d) |  | 99d → 124d |
| 264 | 定标完成 | 2026-06-08 → 2026-05-14 (-25d) | 2026-06-09 → 2026-05-15 (-25d) |  | 99d → 124d |
| 265 | 签署合同完成 | 2026-06-09 → 2026-05-15 (-25d) | 2026-06-23 → 2026-05-29 (-25d) |  | 130d → 155d |
| 266 | **示范区幕墙单位确定** | 2026-05-03 → 2026-04-08 (-25d) | 2026-06-23 → 2026-05-29 (-25d) |  | 59d → 84d |
| 267 | 单位推荐完成 | 2026-05-23 → 2026-04-28 (-25d) | 2026-06-02 → 2026-05-08 (-25d) |  | 147d → 172d |
| 268 | 单位考察完成 | 2026-06-02 → 2026-05-08 (-25d) | 2026-06-04 → 2026-05-10 (-25d) |  | 147d → 172d |
| 269 | 单位入围完成 | 2026-06-04 → 2026-05-10 (-25d) | 2026-06-06 → 2026-05-12 (-25d) |  | 147d → 172d |
| 270 | 技术标完成 | 2026-05-03 → 2026-04-08 (-25d) | 2026-05-14 → 2026-04-19 (-25d) |  | 170d → 195d |
| 271 | 商务标完成 | 2026-05-03 → 2026-04-08 (-25d) | 2026-06-02 → 2026-05-08 (-25d) |  | 59d → 84d |
| 272 | 发标完成 | 2026-06-02 → 2026-05-08 (-25d) | 2026-06-03 → 2026-05-09 (-25d) |  | 59d → 84d |
| 273 | 回标完成 | 2026-06-03 → 2026-05-09 (-25d) | 2026-06-08 → 2026-05-14 (-25d) |  | 59d → 84d |
| 274 | 定标完成 | 2026-06-08 → 2026-05-14 (-25d) | 2026-06-09 → 2026-05-15 (-25d) |  | 59d → 84d |
| 275 | 签署合同完成 | 2026-06-09 → 2026-05-15 (-25d) | 2026-06-23 → 2026-05-29 (-25d) |  | 130d → 155d |
| 276 | **桩基围护单位确定** | 2026-05-03 → 2026-04-08 (-25d) | 2026-05-23 → 2026-04-28 (-25d) |  | 161d → 186d |
| 277 | 单位推荐完成 | 2026-05-03 → 2026-04-08 (-25d) | 2026-05-05 → 2026-04-10 (-25d) |  | 177d → 202d |
| 278 | 单位考察完成 | 2026-05-05 → 2026-04-10 (-25d) | 2026-05-06 → 2026-04-11 (-25d) |  | 177d → 202d |
| 279 | 单位入围完成 | 2026-05-06 → 2026-04-11 (-25d) | 2026-05-07 → 2026-04-12 (-25d) |  | 177d → 202d |
| 280 | 技术标完成 | 2026-05-03 → 2026-04-08 (-25d) | 2026-05-05 → 2026-04-10 (-25d) |  | 179d → 204d |
| 281 | 商务标完成 | 2026-05-03 → 2026-04-08 (-25d) | 2026-05-05 → 2026-04-10 (-25d) |  | 161d → 186d |
| 282 | 发标完成 | 2026-05-05 → 2026-04-10 (-25d) | 2026-05-06 → 2026-04-11 (-25d) |  | 161d → 186d |
| 283 | 回标完成 | 2026-05-06 → 2026-04-11 (-25d) | 2026-05-08 → 2026-04-13 (-25d) |  | 161d → 186d |
| 284 | 定标完成 | 2026-05-08 → 2026-04-13 (-25d) | 2026-05-09 → 2026-04-14 (-25d) |  | 161d → 186d |
| 285 | 签署合同完成 | 2026-05-09 → 2026-04-14 (-25d) | 2026-05-23 → 2026-04-28 (-25d) |  | 161d → 186d |
| 286 | **电力单位确定** | 2026-05-03 → 2026-04-08 (-25d) | 2026-05-31 → 2026-05-06 (-25d) |  | 153d → 178d |
| 287 | 单位推荐完成 | 2026-05-03 → 2026-04-08 (-25d) | 2026-05-05 → 2026-04-10 (-25d) |  | 177d → 202d |
| 288 | 单位考察完成 | 2026-05-05 → 2026-04-10 (-25d) | 2026-05-06 → 2026-04-11 (-25d) |  | 177d → 202d |
| 289 | 单位入围完成 | 2026-05-06 → 2026-04-11 (-25d) | 2026-05-07 → 2026-04-12 (-25d) |  | 177d → 202d |
| 290 | 技术标完成 | 2026-05-03 → 2026-04-08 (-25d) | 2026-05-05 → 2026-04-10 (-25d) |  | 179d → 204d |
| 291 | 商务标完成 | 2026-05-03 → 2026-04-08 (-25d) | 2026-05-10 → 2026-04-15 (-25d) |  | 153d → 178d |
| 292 | 发标完成 | 2026-05-10 → 2026-04-15 (-25d) | 2026-05-11 → 2026-04-16 (-25d) |  | 153d → 178d |
| 293 | 回标完成 | 2026-05-11 → 2026-04-16 (-25d) | 2026-05-16 → 2026-04-21 (-25d) |  | 153d → 178d |
| 294 | 定标完成 | 2026-05-16 → 2026-04-21 (-25d) | 2026-05-17 → 2026-04-22 (-25d) |  | 153d → 178d |
| 295 | 签署合同完成 | 2026-05-17 → 2026-04-22 (-25d) | 2026-05-31 → 2026-05-06 (-25d) |  | 153d → 178d |
| 296 | **自来水单位确定** | 2026-05-03 → 2026-04-08 (-25d) | 2026-05-31 → 2026-05-06 (-25d) |  | 153d → 178d |
| 297 | 单位推荐完成 | 2026-05-03 → 2026-04-08 (-25d) | 2026-05-05 → 2026-04-10 (-25d) |  | 177d → 202d |
| 298 | 单位考察完成 | 2026-05-05 → 2026-04-10 (-25d) | 2026-05-06 → 2026-04-11 (-25d) |  | 177d → 202d |
| 299 | 单位入围完成 | 2026-05-06 → 2026-04-11 (-25d) | 2026-05-07 → 2026-04-12 (-25d) |  | 177d → 202d |
| 300 | 技术标完成 | 2026-05-03 → 2026-04-08 (-25d) | 2026-05-05 → 2026-04-10 (-25d) |  | 179d → 204d |
| 301 | 商务标完成 | 2026-05-03 → 2026-04-08 (-25d) | 2026-05-10 → 2026-04-15 (-25d) |  | 153d → 178d |
| 302 | 发标完成 | 2026-05-10 → 2026-04-15 (-25d) | 2026-05-11 → 2026-04-16 (-25d) |  | 153d → 178d |
| 303 | 回标完成 | 2026-05-11 → 2026-04-16 (-25d) | 2026-05-16 → 2026-04-21 (-25d) |  | 153d → 178d |
| 304 | 定标完成 | 2026-05-16 → 2026-04-21 (-25d) | 2026-05-17 → 2026-04-22 (-25d) |  | 153d → 178d |
| 305 | 签署合同完成 | 2026-05-17 → 2026-04-22 (-25d) | 2026-05-31 → 2026-05-06 (-25d) |  | 153d → 178d |
| 307 | **总包施工准备工作** |  | 2026-06-02 → 2026-05-08 (-25d) | 82.12d → 57.12d | 151d → 176d |
| 308 | 生活区施工 | 2026-05-03 → 2026-04-08 (-25d) | 2026-05-23 → 2026-04-28 (-25d) |  | 161d → 186d |
| 309 | 生活区地块土地平整完整 | 2026-05-03 → 2026-04-08 (-25d) | 2026-05-05 → 2026-04-10 (-25d) |  | 161d → 186d |

| ID | Task | Start | Finish | Duration | Total float |
| --- | --- | --- | --- | --- | --- |
| 310 | 生活区地块石子铺设完成 | 2026-05-05 → 2026-04-10 (-25d) | 2026-05-06 → 2026-04-11 (-25d) |  | 161d → 186d |
| 311 | 生活区地块钢筋铺设完成 | 2026-05-06 → 2026-04-11 (-25d) | 2026-05-07 → 2026-04-12 (-25d) |  | 161d → 186d |
| 312 | 生活区地块钢筋绑扎完成 | 2026-05-07 → 2026-04-12 (-25d) | 2026-05-08 → 2026-04-13 (-25d) |  | 161d → 186d |
| 313 | 生活区地块混凝土浇筑完成 | 2026-05-08 → 2026-04-13 (-25d) | 2026-05-18 → 2026-04-23 (-25d) |  | 161d → 186d |
| 314 | 生活区地块集装箱吊装完成 | 2026-05-18 → 2026-04-23 (-25d) | 2026-05-21 → 2026-04-26 (-25d) |  | 161d → 186d |
| 315 | 生活区地块通水 | 2026-05-21 → 2026-04-26 (-25d) | 2026-05-23 → 2026-04-28 (-25d) |  | 161d → 186d |
| 316 | 生活区地块通电 | 2026-05-21 → 2026-04-26 (-25d) | 2026-05-23 → 2026-04-28 (-25d) |  | 161d → 186d |
| 317 | PC场及图纸/开模确认 | 2026-05-03 → 2026-04-08 (-25d) | 2026-06-02 → 2026-05-08 (-25d) |  | 151d → 176d |
| 319 | 临水临电布置完成 | 2026-04-03 → 2026-03-12 (-22d) | 2026-05-08 → 2026-04-15 (-23d) |  | 176d → 198.12d |
| 320 | 冲洗平台设置/重要道路硬化 | 2026-05-03 → 2026-04-08 (-25d) | 2026-05-09 → 2026-04-14 (-25d) |  | 175d → 200d |
| 322 | 材料采购及加工场布置 | 2026-05-03 → 2026-04-08 (-25d) | 2026-05-13 → 2026-04-18 (-25d) |  | 171d → 196d |
| 323 | **精装施工准备工作** | 2026-06-09 → 2026-05-15 (-25d) | 2026-08-12 → 2026-07-18 (-25d) |  | 80d → 105d |
| 324 | 材料选型定样完成 | 2026-06-09 → 2026-05-15 (-25d) | 2026-07-09 → 2026-06-14 (-25d) |  | 80d → 105d |
| 325 | 图纸二次深化完成 | 2026-06-09 → 2026-05-15 (-25d) | 2026-07-09 → 2026-06-14 (-25d) |  | 80d → 105d |
| 326 | 材料下单完成 | 2026-07-09 → 2026-06-14 (-25d) | 2026-07-13 → 2026-06-18 (-25d) |  | 80d → 105d |
| 327 | 材料排产完成 | 2026-07-13 → 2026-06-18 (-25d) | 2026-08-12 → 2026-07-18 (-25d) |  | 80d → 105d |
| 328 | **幕墙施工准备工作** | 2026-06-09 → 2026-05-15 (-25d) | 2026-09-02 → 2026-08-08 (-25d) |  | 59d → 84d |
| 329 | 材料定样完成 | 2026-06-09 → 2026-05-15 (-25d) | 2026-07-09 → 2026-06-14 (-25d) |  | 114d → 139d |
| 330 | 图纸二次深化完成 | 2026-06-09 → 2026-05-15 (-25d) | 2026-07-09 → 2026-06-14 (-25d) |  | 59d → 84d |
| 331 | 各材料开模完成 | 2026-07-09 → 2026-06-14 (-25d) | 2026-07-19 → 2026-06-24 (-25d) |  | 59d → 84d |
| 332 | 样板墙施工完成 | 2026-07-19 → 2026-06-24 (-25d) | 2026-09-02 → 2026-08-08 (-25d) |  | 59d → 84d |
| 333 | 部分材料提前下单 | 2026-07-09 → 2026-06-14 (-25d) | 2026-07-24 → 2026-06-29 (-25d) |  | 99d → 124d |
| 334 | **景观施工准备工作** | 2026-06-09 → 2026-05-15 (-25d) | 2026-07-24 → 2026-06-29 (-25d) |  | 99d → 124d |
| 335 | 材料定样完成 | 2026-06-09 → 2026-05-15 (-25d) | 2026-07-09 → 2026-06-14 (-25d) |  | 114d → 139d |
| 336 | 图纸二次深化完成 | 2026-06-09 → 2026-05-15 (-25d) | 2026-07-09 → 2026-06-14 (-25d) |  | 99d → 124d |
| 337 | 部分材料提前下单 | 2026-07-09 → 2026-06-14 (-25d) | 2026-07-24 → 2026-06-29 (-25d) |  | 99d → 124d |
| 338 | **4#(售楼处)施工计划** | 2026-05-15 → 2026-04-20 (-25d) |  | 169d → 194d |  |
| 339 | **基础** | 2026-05-15 → 2026-04-20 (-25d) |  | 57d → 82d |  |
| 340 | 打桩完成 | 2026-05-15 → 2026-04-20 (-25d) | 2026-05-25 → 2026-04-30 (-25d) |  |  |
| 341 | 桩基含放线施工(含7号楼南北单元之间地库)完成 | 2026-05-25 → 2026-04-30 (-25d) | 2026-06-06 → 2026-05-12 (-25d) |  | 144d → 112d |
| 342 | 围护施工完成 | 2026-05-25 → 2026-04-30 (-25d) | 2026-06-09 → 2026-05-15 (-25d) |  |  |
| 343 | 桩基检测(降水及休止期)完成 | 2026-06-06 → 2026-05-12 (-25d) | 2026-06-09 → 2026-07-11 (+32d) | 3d → 60d | 144d → 112d |
| 344 | 土方开挖完成 | 2026-06-24 → 2026-05-30 (-25d) |  | 10d → 35d |  |
